# caArray

Schedule from MS Project, 2007-04-02 to 2007-12-14, A marks actual dates.
Project Schedule
5AM Solutions

## Calendars

- Standard: Mon-Fri 08:00-12:00, 13:00-17:00; Sat-Sun off.

## Resources

| Resource |
| --- |
| etavela |
| smatyas |
| bgendleman |
| rdaly |
| jpike |
| rsrinavasa |
| smiller |
| pduvall |
| aglover |
| bmason |
| tparnell |
| lpower |
| mrehfuss |
| jpke |
| mrehuss |
| etavlea |
| mrefhuss |

## Schedule

| ID | WBS | Task | Duration | Start | Finish | Predecessors | Complete | Remaining | Baseline start | Baseline finish | Baseline duration | Total slack | Free slack | Constraint | Deadline | Resources | Work | Actual work |
| --- | --- | --- | --- | --- | --- | --- | --- | --- | --- | --- | --- | --- | --- | --- | --- | --- | --- | --- |
| 1 | 1 | **caArray 2.0** | 185d | 2007-04-02 A | 2007-12-14 |  | 34% | 121.5d | 2007-04-02 | 2007-05-21 | 35.75d? | -72d | 0d |  | 2007-07-27 |  | 10984.6h | 5016.92h |
| 2 | 1.1 | **Inception Phase** | 33d | 2007-04-02 A | 2007-05-16 A |  | 100% |  | 2007-04-02 | 2007-05-15 | 32d |  |  |  |  |  | 749.28h | 749.28h |
| 3 | 1.1.1 | **Inception Iteration 1** | 33d | 2007-04-02 A | 2007-05-16 A |  | 100% |  | 2007-04-02 | 2007-05-15 | 32d |  |  |  |  |  | 749.28h | 749.28h |
| 4 | 1 | **Project Management** | 31.25d | 2007-04-02 A | 2007-05-15 A |  | 100% |  | 2007-04-02 | 2007-05-15 | 31.25d |  |  |  |  |  | 20h | 20h |
| 5 | 1.1.1.1.1 | Plan the project | 12d | 2007-04-02 A | 2007-04-19 A |  | 100% |  | 2007-04-02 | 2007-04-19 | 12d |  |  | start no earlier than 2007-04-02 |  | rdaly [5%]; bgendleman | 20h | 20h |
| 6 | 1.4 | Plan Remainder of Initial Iteration | 1d | 2007-04-19 A | 2007-04-19 A |  | 100% |  | 2007-04-19 | 2007-04-19 | 1d |  |  | start no earlier than 2007-04-19 |  |  |  |  |
| 7 | 1.8 | Plan for Next Iteration | 5d | 2007-05-07 A | 2007-05-11 A |  | 100% |  | 2007-05-07 | 2007-05-11 | 5d |  |  |  |  |  |  |  |
| 8 | 1.1.1.1.4 | **Finalize Deliverables** | 31.25d | 2007-04-02 A | 2007-05-15 A |  | 100% |  | 2007-04-02 | 2007-05-15 | 31.25d |  |  |  |  |  |  |  |
| 9 | 1.1.1.1.4.1 | March Status Report | 2h | 2007-04-16 A | 2007-04-16 A |  | 100% |  | 2007-04-16 | 2007-04-16 | 2h |  |  | start no earlier than 2007-04-16 | 2007-04-18 |  |  |  |
| 10 | 1.1.1.1.4.2 | April Status Report | 2h | 2007-05-15 A | 2007-05-15 A |  | 100% |  | 2007-05-15 | 2007-05-15 | 2h |  |  | start no earlier than 2007-05-15 | 2007-05-15 |  |  |  |
| 11 | 1.1.1.1.4.3 | Release Risk List | 2h | 2007-04-02 A | 2007-04-02 A |  | 100% |  | 2007-04-02 | 2007-04-02 | 2h |  |  |  | 2007-05-15 |  |  |  |
| 12 | 3 | **Requirements** | 30.5d | 2007-04-02 A | 2007-05-14 A |  | 100% |  | 2007-04-02 | 2007-05-14 | 30.35d |  |  |  |  |  | 160.6h | 160.6h |
| 13 | 3.1 | Define the Preliminary Vision | 5d | 2007-04-23 A | 2007-05-04 A | 5SS, 14FF | 100% |  | 2007-04-23 | 2007-05-04 | 5d |  |  | start no earlier than 1999-05-04 |  |  |  |  |
| 14 | 3.2 | **Elicit Stakeholder Needs** | 22.4d | 2007-04-04 A | 2007-05-04 A | 5SS | 100% |  | 2007-04-04 | 2007-05-04 | 22.75d |  |  |  |  |  | 45h | 45h |
| 15 | 1.1.1.2.2.1 | Live Meeting with NCICB Stakeholders | 4.38d | 2007-04-04 A | 2007-04-12 A |  | 100% |  | 2007-04-04 | 2007-04-11 | 4.38d |  |  | start no earlier than 2007-04-04 |  | bgendleman; rdaly; etavela [25%] | 30h | 30h |
| 16 | 1.1.1.2.2.2 | Teleconference with Columbia - Aris | 1h | 2007-04-09 A | 2007-04-09 A | 15 | 100% |  | 2007-04-09 | 2007-04-09 | 1h |  |  |  |  | bgendleman | 1h | 1h |
| 17 | 1.1.1.2.2.3 | Teleconference with Northwestern | 2h | 2007-04-20 A | 2007-04-20 A |  | 100% |  | 2007-04-20 | 2007-04-20 | 2h |  |  | start no earlier than 2007-04-20 |  | bgendleman | 2h | 2h |
| 18 | 1.1.1.2.2.4 | Live Meeting with Georgetown | 4h | 2007-04-23 A | 2007-04-23 A | 17 | 100% |  | 2007-04-27 | 2007-04-27 | 4h |  |  | start no earlier than 2007-04-23 |  | bgendleman | 4h | 4h |
| 19 | 1.1.1.2.2.5 | Live Meeting with Thomas Jefferson | 4h | 2007-04-27 A | 2007-04-27 A | 18 | 100% |  | 2007-04-27 | 2007-05-04 | 4h |  |  | start no earlier than 2007-04-26 |  | bgendleman | 4h | 4h |
| 20 | 1.1.1.2.2.6 | Live Meeting with U Pitt | 4h | 2007-05-03 A | 2007-05-04 A | 19 | 100% |  | 2007-05-04 | 2007-05-04 | 4h |  |  | start no earlier than 2007-04-30 |  | bgendleman | 4h | 4h |
| 21 | 3.3 | Identify and Describe Use Cases | 4d | 2007-04-18 A | 2007-04-23 A |  | 100% |  | 2007-04-18 | 2007-04-23 | 4d |  |  | finish no earlier than 2007-04-20 |  | bgendleman; rdaly | 56h | 56h |
| 22 | 3.5 | Refine the System Definition | 6.35d | 2007-04-24 A | 2007-05-04 A | 6, 21 | 100% |  | 2007-04-24 | 2007-05-10 | 6.25d |  |  | start no earlier than 2007-04-18 |  | bgendleman; etavela [10%] | 20h | 20h |
| 23 | 1.1.1.2.5 | **Implement Requirement and Test Traceability** | 3.25d | 2007-04-16 A | 2007-04-19 A |  | 100% |  | 2007-04-16 | 2007-04-20 | 4.6d |  |  |  |  |  | 3.6h | 3.6h |
| 24 | 1.1.1.2.5.1 | Determine Approach | 2.25d | 2007-04-16 A | 2007-04-19 A |  | 100% |  | 2007-04-16 | 2007-04-20 | 2.25d |  |  | start no earlier than 2007-04-16 |  | bgendleman [20%]; etavela [20%] | 3.6h | 3.6h |
| 25 | 3.6 | Manage Changing Requirements | 1d | 2007-04-27 A | 2007-05-04 A | 13SS | 100% |  | 2007-04-27 | 2007-05-04 | 1d |  |  | start no earlier than 2007-04-25 |  | bgendleman | 8h | 8h |

Notes:
- 15: expect follow up with Suba, Mervi and Xiaopeng as requirements contributors

| ID | WBS | Task | Type | Duration | Start | Finish | Predecessors | Complete | Baseline start | Baseline finish | Baseline duration | Constraint | Deadline | Resources | Work | Actual work |
| --- | --- | --- | --- | --- | --- | --- | --- | --- | --- | --- | --- | --- | --- | --- | --- | --- |
| 26 | 1.1.1.2.7 | **Finalize Deliverables** |  | 30.5d | 2007-04-02 A | 2007-05-14 A |  | 100% | 2007-04-02 | 2007-05-14 | 30.35d |  |  |  | 28h | 28h |
| 27 | 1.1.1.2.7.1 | Requirements Management Plan |  | 0.25d | 2007-04-02 A | 2007-04-09 A |  | 100% | 2007-04-02 | 2007-04-09 | 0.25d |  |  | bgendleman | 2h | 2h |
| 28 | 1.1.1.2.7.2 | Finalize Questionnaire |  | 0.25d | 2007-04-02 A | 2007-04-02 A |  | 100% | 2007-04-02 | 2007-04-02 | 0.25d |  |  | bgendleman | 2h | 2h |
| 29 | 1.1.1.2.7.3 | Draft Vision Document |  | 1d | 2007-04-30 A | 2007-05-11 A | 20, 13 | 100% | 2007-04-30 | 2007-05-11 | 1d |  |  | bgendleman | 8h | 8h |
| 30 | 1.1.1.2.7.4 | Draft Supplementary Spec |  | 1d | 2007-05-11 A | 2007-05-14 A | 29 | 100% | 2007-05-11 | 2007-05-14 | 1d |  |  | bgendleman | 8h | 8h |
| 31 | 1.1.1.2.7.5 | Draft Use Case Model |  | 1d | 2007-04-27 A | 2007-05-03 A | 21 | 100% | 2007-04-27 | 2007-05-04 | 1d |  | 2007-05-04 | bgendleman | 8h | 8h |
| 32 | 4 | **Analysis and Design** |  | 33d | 2007-04-02 A | 2007-05-16 A |  | 100% | 2007-04-02 | 2007-04-20 | 15d |  |  |  | 111.68h | 111.68h |
| 33 | 4.1 | Use Case Analysis (Manage Protocols) |  | 1d | 2007-04-05 A | 2007-04-05 A |  | 100% | 2007-04-05 | 2007-04-05 | 1d | start no earlier than 2007-04-05 |  | etavela | 8h | 8h |
| 34 | 1.1.1.3.2 | Use Case Design (Manage Protocols) |  | 1d | 2007-04-06 A | 2007-04-06 A | 33 | 100% | 2007-04-06 | 2007-04-06 | 1d |  |  | etavela | 8h | 8h |
| 35 | 1.1.1.3.3 | Vocabulary Management Subsystem Design |  | 4.95d | 2007-04-04 A | 2007-04-12 A |  | 100% | 2007-04-04 | 2007-04-12 | 4.95d | start no earlier than 2007-04-04 |  | etavela [10%]; jpike | 26.08h | 26.08h |
| 36 | 1.1.1.3.4 | Data Access Subsystem Design |  | 2.75d | 2007-04-09 A | 2007-04-13 A |  | 100% | 2007-04-09 | 2007-04-20 | 3d | start no earlier than 2007-04-09 | 2007-04-20 | rsrinavasa; etavela [25%] | 18h | 18h |
| 37 | 1.1.1.3.5 | MAGE-OM Façade |  | 4.5d | 2007-04-02 A | 2007-04-10 A |  | 100% | 2007-04-02 | 2007-04-10 | 4.5d |  |  | rsrinavasa; etavela [25%] | 30h | 30h |
| 38 | 1.1.1.3.6 | **Finalize Deliverables** |  | 3d | 2007-05-14 A | 2007-05-16 A |  | 100% | 2007-04-11 | 2007-04-19 | 6d |  |  |  | 21.6h | 21.6h |
| 39 | 1.1.1.3.6.1 | Release Candidate Software Architecture Document |  | 3d | 2007-05-14 A | 2007-05-16 A |  | 100% | 2007-04-11 | 2007-04-19 | 5d | start no earlier than 2007-05-14 |  | etavela [90%] | 21.6h | 21.6h |
| 40 | 1.1.1.4 | **Implementation** |  | 31.82d | 2007-04-02 A | 2007-05-15 A |  | 100% | 2007-04-02 | 2007-05-15 | 32d |  |  |  | 263.2h | 263.2h |
| 41 | 1.1.1.4.1 | Structure the Implementation Model |  | 1.5d | 2007-04-02 A | 2007-04-04 A |  | 100% | 2007-04-02 | 2007-04-04 | 1.5d | start no earlier than 2007-04-09 | 2007-04-06 | etavela | 12h | 12h |
| 42 | 1.1.1.4.2 | Implement Vocabulary Subsystem |  | 3w | 2007-04-13 A | 2007-05-08 A | 41, 35 | 100% | 2007-04-12 | 2007-05-08 | 3w |  |  | jpike | 120h | 120h |
| 43 | 1.1.1.4.3 | Implement Data Access |  | 3d | 2007-04-16 A | 2007-04-30 A | 41 | 100% | 2007-04-16 | 2007-04-24 | 3d | start no earlier than 2007-04-16 | 2007-04-20 | rsrinavasa | 24h | 24h |
| 44 | 1.1.1.4.4 | Implement Protocol Management |  | 2.2w | 2007-04-16 A | 2007-05-09 A | 34 | 100% | 2007-04-16 | 2007-05-09 | 2.1w | start no earlier than 2007-04-16 |  | jpike; rsrinavasa; etavela [10%] | 52h | 52h |
| 45 | 1.1.1.4.5 | Implement Protocol User Interface (minimal) |  | 3d | 2007-05-09 A | 2007-05-14 A | 44 | 100% | 2007-05-09 | 2007-05-14 | 3d |  |  | rsrinavasa; jpike | 48h | 48h |
| 46 | 1.1.1.4.6 | **Finalize Deliverables** |  | 1d | 2007-05-14 A | 2007-05-15 A |  | 100% | 2007-05-14 | 2007-05-15 | 1d |  |  |  | 7.2h | 7.2h |
| 47 | 1.1.1.4.6.1 | Release Architectural Prototype |  | 1d | 2007-05-14 A | 2007-05-15 A | 45 | 100% | 2007-05-14 | 2007-05-15 | 1d |  |  | etavela [90%] | 7.2h | 7.2h |
| 48 | 5 | **Test** |  | 31.82d | 2007-04-02 A | 2007-05-15 A |  | 100% | 2007-04-02 | 2007-05-15 | 31.07d |  |  |  | 27.8h | 27.8h |
| 49 | 1.1.1.5.1 | Meet with Indepdent QA |  | 2h | 2007-04-09 A | 2007-04-09 A |  | 100% | 2007-04-09 | 2007-04-09 | 2h | finish no later than 2007-04-27 | 2007-04-27 | bgendleman [80%] | 1.6h | 1.6h |
| 50 | 1.1.1.5.2 | Implement System Tests Against Protocol Management | milestone | 0d | 2007-05-15 A | 2007-05-15 A | 47 | 100% | 2007-05-15 | 2007-05-15 | 0d | start no earlier than 2007-05-14 |  | smatyas |  |  |
| 51 | 5.1 | Analyze and Identify Test Approach |  | 1d | 2007-04-02 A | 2007-04-27 A |  | 100% | 2007-04-02 | 2007-04-27 | 1d |  |  | smatyas; etavela; bgendleman | 8h | 8h |

| ID | WBS | Task | Type | Duration | Start | Finish | Predecessors | Complete | Remaining | Baseline start | Baseline finish | Baseline duration | Total slack | Free slack | Constraint | Deadline | Resources | Work | Actual work |
| --- | --- | --- | --- | --- | --- | --- | --- | --- | --- | --- | --- | --- | --- | --- | --- | --- | --- | --- | --- |
| 52 | 1.1.1.5.4 | **Finalize Deliverables** |  | 4.25d | 2007-04-27 A | 2007-05-03 A |  | 100% |  | 2007-04-27 | 2007-05-04 | 5d |  |  |  |  |  | 18.2h | 18.2h |
| 53 | 1.1.1.5.4.1 | Release Test Plan |  | 2.6d | 2007-04-27 A | 2007-05-03 A | 51 | 100% |  | 2007-04-27 | 2007-05-04 | 2.5d |  |  |  |  | smatyas; bgendleman [25%]; etavela [5%] | 18.2h | 18.2h |
| 54 | 6 | **Environment** |  | 30.25d | 2007-04-02 A | 2007-05-14 A |  | 100% |  | 2007-04-02 | 2007-05-14 | 30.25d |  |  |  |  |  | 136h | 136h |
| 55 | 1.1.1.6.1 | Launch Development Process |  | 6h | 2007-04-09 A | 2007-04-18 A |  | 100% |  | 2007-04-09 | 2007-04-18 | 6h |  |  | start no earlier than 2007-04-09 |  | smatyas; jpike; smiller; rsrinavasa | 12h | 12h |
| 56 | 1.1.1.6.2 | **Set Up Tools** |  | 20d | 2007-04-02 A | 2007-04-27 A |  | 100% |  | 2007-04-02 | 2007-04-27 | 20d |  |  |  |  |  | 76h | 76h |
| 57 | 1.1.1.6.2.1 | Set Up Maven |  | 4d | 2007-04-02 A | 2007-04-09 A |  | 100% |  | 2007-04-02 | 2007-04-09 | 4d |  |  | start no earlier than 2007-04-02 |  | smatyas [50%]; smiller [50%] | 16h | 16h |
| 58 | 1.1.1.6.2.2 | Set Up Continuous Integration |  | 1d | 2007-04-16 A | 2007-04-16 A |  | 100% |  | 2007-04-16 | 2007-04-16 | 1d |  |  | start no earlier than 2007-04-16 |  | smatyas | 8h | 8h |
| 59 | 1.1.1.6.2.3 | Set Up Eclipse |  | 2d | 2007-04-03 A | 2007-04-06 A |  | 100% |  | 2007-04-03 | 2007-04-06 | 2d |  |  | start no earlier than 2007-04-03 |  | jpike; smiller [50%] | 12h | 12h |
| 60 | 1.1.1.6.2.4 | Set Up Selenium |  | 2d | 2007-04-26 A | 2007-04-27 A | 58 | 100% |  | 2007-04-26 | 2007-04-27 | 2d |  |  | finish no earlier than 2007-04-27 | 2007-04-27 | smatyas | 16h | 16h |
| 61 | 1.1.1.6.2.5 | Set Up Code Quality Tools |  | 2d | 2007-04-02 A | 2007-04-09 A |  | 100% |  | 2007-04-02 | 2007-04-09 | 2d |  |  |  |  | smatyas; etavela | 24h | 24h |
| 62 | 1.1.1.6.3 | **Finalize Deliverables** |  | 19.25d | 2007-04-17 A | 2007-05-14 A |  | 100% |  | 2007-04-19 | 2007-05-14 | 17.25d |  |  |  |  |  | 48h | 48h |
| 63 | 1.1.1.6.3.1 | Release Development Case |  | 0.25d | 2007-05-14 A | 2007-05-14 A |  | 100% |  | 2007-05-14 | 2007-05-14 | 0.25d |  |  | start no earlier than 2007-05-14 |  | etavela | 2h | 2h |
| 64 | 1.1.1.6.3.2 | Release Guidelines for the Project |  | 1.25d | 2007-04-20 A | 2007-04-23 A |  | 100% |  | 2007-04-20 | 2007-04-23 | 1.25d |  |  | start no earlier than 2007-04-16 |  | etavela | 10h | 10h |
| 65 | 1.1.1.6.3.3 | Release Templates for the Project |  | 5.5d | 2007-04-17 A | 2007-04-30 A |  | 100% |  | 2007-04-19 | 2007-04-30 | 5.55d |  |  | finish no earlier than 2007-04-13 |  | smiller [50%]; etavela | 36h | 36h |
| 66 | 7 | **Configuration & Change Management** |  | 31.25d | 2007-04-02 A | 2007-05-15 A |  | 100% |  | 2007-04-02 | 2007-05-15 | 31.25d |  |  |  |  |  | 30h | 30h |
| 67 | 7.1 | Plan Project Configuration and Change Control |  | 0.5d | 2007-04-20 A | 2007-04-20 A |  | 100% |  | 2007-04-20 | 2007-04-24 | 0.55d |  |  | finish no earlier than 2007-04-20 | 2007-05-15 | etavela; bgendleman | 8h | 8h |
| 68 | 1.1.1.7.2 | **Finalize Deliverables** |  | 31.25d | 2007-04-02 A | 2007-05-15 A |  | 100% |  | 2007-04-02 | 2007-05-15 | 31.25d |  |  |  |  |  | 22h | 22h |
| 69 | 1.1.1.7.2.1 | Release Configuration Management Plan |  | 0.75d | 2007-04-02 A | 2007-05-15 A |  | 100% |  | 2007-04-02 | 2007-05-15 | 0.75d |  |  |  |  | etavela; bgendleman | 6h | 6h |
| 70 | 1.1.1.7.2.2 | G-Forge Implementation of the Change Control Process |  | 2d | 2007-04-02 A | 2007-05-14 A |  | 100% |  | 2007-04-02 | 2007-05-14 | 2d |  |  |  |  | bgendleman | 16h | 16h |
| 71 | 1.1.1.8 | Inception Complete | milestone | 0d | 2007-05-15 A | 2007-05-15 A | 4, 5, 26, 8, 52, 62, 68 | 100% |  | 2007-05-15 | 2007-05-15 | 0d |  |  | start no earlier than 2007-05-15 | 2007-05-15 |  |  |  |
| 72 | 1.2 | caArray 1.x Focus |  | 22d | 2007-05-17 A | 2007-06-18 A | 3 | 100% |  |  |  |  |  |  |  |  | etavela [90%]; bgendleman [80%]; smatyas; jpike | 651.2h | 651.2h |
| 73 | 1.3 | **Elaboration Phase** |  | 58.7d | 2007-06-18 A | 2007-09-06 | 71, 72 | 58% | 24.68d | 2007-05-15 | 2007-05-17 | 2.5d? | -1d | 0d |  | 2007-08-27 |  | 5512.11h | 3616.44h |
| 74 | 1.3.1 | **Elaboration - Iteration 1** |  | 29.7d | 2007-06-18 A | 2007-07-27 A |  | 100% |  | 2007-05-15 | 2007-05-17 | 2.5d |  |  |  |  |  | 2822.51h | 2822.51h |
| 75 | 1 | **Project Management** |  | 29.7d | 2007-06-18 A | 2007-07-27 A | 71 | 100% |  | 2007-04-02 | 2007-05-15 | 31.25d |  |  |  |  |  | 532.8h | 532.8h |
| 76 | 1.3.1.1.1 | Inception Post Mortem |  | 4d | 2007-06-28 A | 2007-07-03 A |  | 100% |  | 2007-05-15 | 2007-05-17 | 20h |  |  | start no earlier than 2007-06-28 |  | smatyas; bgendleman [80%]; etavela [90%]; jpike; rsrinavasa | 150.4h | 150.4h |
| 77 | 1.4 | Plan Remainder of Initial Iteration |  | 1d | 2007-06-27 A | 2007-06-27 A |  | 100% |  | 2007-04-19 | 2007-04-19 | 1d |  |  | start no earlier than 2007-06-27 |  | etavela [90%]; bgendleman [80%] | 13.6h | 13.6h |
| 78 | 1.3.1.1.3 | Weekly Status Meetings |  | 1.5d | 2007-06-18 A | 2007-06-19 A |  | 100% |  |  |  |  |  |  | start no earlier than 2007-05-23 |  | bgendleman [80%] | 9.6h | 9.6h |
| 79 | 1.8 | Plan for Next Iteration |  | 1d | 2007-07-23 A | 2007-07-26 A | 84FF | 100% |  | 2007-05-07 | 2007-05-11 | 5d |  |  | start no earlier than 2007-07-23 |  | bgendleman [80%]; etavela [90%] | 13.6h | 13.6h |

Notes:
- 57: Instructions documented on Wiki
- 59: Instructions documented on Wiki
- 61: Cobertura, PMD, CheckStyle, Simian, JUnit
- 64: UML, Java, JSP/HTML
- 65: Java, JSP/HTML / Use Case Summary / Use Case Specification / Vision / Traceability Matrix - will attempt to do in EA

| ID | WBS | Task | Duration | Start | Finish | Predecessors | Complete | Baseline start | Baseline finish | Baseline duration | Constraint | Deadline | Resources | Work | Actual work |
| --- | --- | --- | --- | --- | --- | --- | --- | --- | --- | --- | --- | --- | --- | --- | --- |
| 80 | 1.3.1.1.5 | **Finalize Deliverables** | 29.7d | 2007-06-18 A | 2007-07-27 A |  | 100% | 2007-04-02 | 2007-05-15 | 31.25d |  |  |  | 345.6h | 345.6h |
| 81 | 1.3.1.1.5.1 | May Status Report | 2h | 2007-06-18 A | 2007-06-18 A |  | 100% | 2007-04-16 | 2007-04-16 | 2h | start no earlier than 2007-06-08 | 2007-04-18 | bgendleman | 2h | 2h |
| 82 | 1.3.1.1.5.2 | June Status Report | 2h | 2007-07-13 A | 2007-07-13 A |  | 100% |  |  |  |  |  | bgendleman | 2h | 2h |
| 83 | 1.3.1.1.5.3 | Update Risk List | 4h | 2007-06-18 A | 2007-07-27 A |  | 100% | 2007-04-02 | 2007-04-02 | 2h | finish no earlier than 2007-07-27 | 2007-05-15 | bgendleman [6774.3%] | 237.6h | 237.6h |
| 84 | 1.9 | Finalize Iteration Plans | 10d | 2007-07-13 A | 2007-07-26 A |  | 100% | 2007-05-11 | 2007-05-11 | 1d | finish no earlier than 2007-07-27 |  | bgendleman [80%]; etavela [50%] | 104h | 104h |
| 85 | 1.3.1.2 | **Requirements** | 27.7d | 2007-06-18 A | 2007-07-25 A |  | 100% |  |  |  |  |  |  | 298.4h | 298.4h |
| 86 | 1.3.1.2.1 | Update Draft Documents | 3d | 2007-06-18 A | 2007-06-21 A |  | 100% |  |  |  | start no earlier than 2007-05-22 |  | bgendleman | 24h | 24h |
| 87 | 1.3.1.2.2 | Write Prioritized Use Cases | 10d | 2007-06-18 A | 2007-07-02 A |  | 100% |  |  |  | start no earlier than 2007-05-25 |  | bgendleman | 80h | 80h |
| 88 | 1.3.1.2.3 | Create Wireframes for targeted Ucs (deferred) | 3d | 2007-07-23 A | 2007-07-25 A | 87, 103 | 100% |  |  |  |  |  | bgendleman | 24h | 24h |
| 89 | 1.3.1.2.4 | Consolidate Models | 1d | 2007-06-18 A | 2007-06-19 A |  | 100% |  |  |  | start no earlier than 2007-05-24 |  | bgendleman [80%]; etavela [90%] | 13.6h | 13.6h |
| 90 | 1.3.1.2.5 | **Finalize Deliverables** | 26.7d | 2007-06-18 A | 2007-07-24 A |  | 100% |  |  |  |  |  |  | 156.8h | 156.8h |
| 91 | 1.3.1.2.5.1 | Update Vision | 1d | 2007-06-21 A | 2007-06-22 A | 86 | 100% |  |  |  |  |  | bgendleman | 8h | 8h |
| 92 | 1.3.1.2.5.2 | Update Supplemental Specification | 1d | 2007-06-21 A | 2007-06-22 A | 86 | 100% |  |  |  |  |  | bgendleman | 8h | 8h |
| 93 | 1.3.1.2.5.3 | UC Login | 1d | 2007-06-18 A | 2007-06-19 A |  | 100% |  |  |  |  |  | bgendleman | 8h | 8h |
| 94 | 1.3.1.2.5.4 | UC Acquire Project Data via API | 2d | 2007-06-18 A | 2007-06-20 A |  | 100% |  |  |  |  |  | rsrinavasa | 16h | 16h |
| 95 | 1.3.1.2.5.5 | UC Manage Data Files | 2d | 2007-06-22 A | 2007-06-25 A |  | 100% |  |  |  |  |  | rsrinavasa; bgendleman [80%] | 28.8h | 28.8h |
| 96 | 1.3.1.2.5.6 | UC Import Project Data | 1d | 2007-07-02 A | 2007-07-03 A | 87 | 100% |  |  |  |  |  | bgendleman | 8h | 8h |
| 97 | 1.3.1.2.5.7 | UC Submit Project Proposal | 1d | 2007-07-03 A | 2007-07-04 A | 96 | 100% |  |  |  |  |  | bgendleman | 8h | 8h |
| 98 | 1.3.1.2.5.8 | UC Report on Work Accomplished | 1d | 2007-07-04 A | 2007-07-05 A | 97 | 100% |  |  |  |  |  | bgendleman | 8h | 8h |
| 99 | 1.3.1.2.5.9 | UC Validate File for Submission | 1d | 2007-07-05 A | 2007-07-06 A | 98 | 100% |  |  |  |  |  | bgendleman | 8h | 8h |
| 100 | 1.3.1.2.5.10 | UC Download Project Data (deferred) | 1d | 2007-07-06 A | 2007-07-09 A | 99 | 100% |  |  |  |  |  | bgendleman | 8h | 8h |
| 101 | 1.3.1.2.5.11 | UC Manage Users | 1d | 2007-07-09 A | 2007-07-10 A | 100 | 100% |  |  |  |  |  | bgendleman | 8h | 8h |
| 102 | 1.3.1.2.5.12 | UC Manage Institutional Groups (deferred) | 1d | 2007-07-10 A | 2007-07-11 A | 101 | 100% |  |  |  |  |  | bgendleman | 8h | 8h |
| 103 | 1.3.1.2.5.13 | UX Modeling/Wireframes (deferred) | 2d | 2007-07-19 A | 2007-07-20 A | 102 | 100% |  |  |  |  |  | bgendleman | 16h | 16h |
| 104 | 1.3.1.2.5.14 | Stylesheet Framework (deferred) | 2d | 2007-07-23 A | 2007-07-24 A | 103 | 100% |  |  |  |  |  | bgendleman | 16h | 16h |

| ID | WBS | Task | Duration | Start | Finish | Predecessors | Complete | Constraint | Resources | Work | Actual work |
| --- | --- | --- | --- | --- | --- | --- | --- | --- | --- | --- | --- |
| 105 | 1.3.1.3 | **Analysis and Design** | 29.7d | 2007-06-18 A | 2007-07-27 A |  | 100% |  |  | 536.59h | 536.59h |
| 106 | 1.3.1.3.1 | Targeted Use Case Analysis and Design | 10d | 2007-07-02 A | 2007-07-16 A | 76, 87 | 100% | start no earlier than 2007-05-23 | etavela [90%]; jpike; rsrinavasa | 232h | 232h |
| 107 | 1.3.1.3.2 | MIAME and MAGE-TAB Comparison | 2d | 2007-07-05 A | 2007-07-06 A |  | 100% | start no earlier than 2007-07-05 | etavela [10%]; jpike; rsrinavasa | 33.6h | 33.6h |
| 108 | 1.3.1.3.3 | Grid Strategy - Deferred | 8.53d | 2007-06-18 A | 2007-06-28 A |  | 100% |  | etavela [25%]; rsrinavasa | 36h | 36h |
| 109 | 1.3.1.3.4 | Parsing Strategy | 3d | 2007-07-16 A | 2007-07-19 A | 106 | 100% |  | etavela [90%] | 21.6h | 21.6h |
| 110 | 1.3.1.3.5 | Binary Storage | 3d | 2007-07-16 A | 2007-07-19 A | 106 | 100% |  | etavela [90%] | 21.6h | 21.6h |
| 111 | 1.3.1.3.6 | Represent SNP Data - Deferred | 3d | 2007-06-18 A | 2007-06-21 A |  | 100% | start no earlier than 2007-05-24 |  |  |  |
| 112 | 1.3.1.3.7 | Security - Deferred | 3d | 2007-07-16 A | 2007-07-19 A | 106 | 100% | start no earlier than 2007-05-29 |  |  |  |
| 113 | 1.3.1.3.8 | 1.6 Data Migration Strategy | 2d | 2007-07-16 A | 2007-07-18 A | 106 | 100% |  | etavela [90%]; smatyas [50%] | 22.4h | 22.4h |
| 114 | 1.3.1.3.9 | **Finalize Deliverables** | 21.17d | 2007-06-28 A | 2007-07-27 A |  | 100% |  |  | 169.39h | 169.39h |
| 115 | 1.3.1.3.9.1 | Update Software Architecture Document | 21.17d | 2007-06-28 A | 2007-07-27 A | 108 | 100% | finish no earlier than 2007-07-27 | etavela | 169.39h | 169.39h |
| 116 | 1.3.1.4 | **Implementation** | 19.34d | 2007-07-02 A | 2007-07-27 A |  | 100% |  |  | 356h | 356h |
| 117 | 1.3.1.4.1 | Implement UC Import Project Data | 5d | 2007-07-19 A | 2007-07-26 A | 109 | 100% |  | bmason; rsrinavasa; jpike; etavela [90%] | 110.4h | 110.4h |
| 118 | 1.3.1.4.2 | Implement UC Submit Project Proposal | 2d | 2007-07-23 A | 2007-07-24 A |  | 100% | start no earlier than 2007-07-23 | etavela [90%]; tparnell | 30.4h | 30.4h |
| 119 | 1.3.1.4.3 | Implement UC Login (incomplete) | 5d | 2007-07-02 A | 2007-07-09 A | 87 | 100% | start no earlier than 2007-06-01 | jpike | 40h | 40h |
| 120 | 1.3.1.4.4 | Implement UC Acquire Project Data via API (incomplete) | 10d | 2007-07-09 A | 2007-07-23 A | 119 | 100% |  | etavela [90%]; rsrinavasa | 152h | 152h |
| 121 | 1.3.1.4.5 | Implement UC Manage Project Data Files (to support import) | 2d | 2007-07-23 A | 2007-07-25 A | 120 | 100% |  | tparnell | 16h | 16h |
| 122 | 1.3.1.4.6 | **Finalize Deliverables** | 0.64d | 2007-07-27 A | 2007-07-27 A |  | 100% |  |  | 7.2h | 7.2h |
| 123 | 1.3.1.4.6.1 | Release Final E1 Development Build | 0.64d | 2007-07-27 A | 2007-07-27 A |  | 100% | start no earlier than 2007-07-27 | etavela [90%]; smatyas [50%] | 7.2h | 7.2h |
| 124 | 1.3.1.5 | **Test** | 9d | 2007-07-16 A | 2007-07-27 A |  | 100% |  |  | 175.2h | 175.2h |
| 125 | 1.3.1.5.1 | Create Functional Test for targeted UC's | 5d | 2007-07-16 A | 2007-07-23 A | 106 | 100% |  | jpike; rsrinavasa; etavela [90%] | 116h | 116h |
| 126 | 1.3.1.5.2 | Incorporate Test Cases into Gforge (Deferred) | 1d | 2007-07-25 A | 2007-07-25 A |  | 100% | start no earlier than 2007-07-25 | bgendleman | 8h | 8h |
| 127 | 1.3.1.5.3 | Manage Test Assets (Deferred) | 2d | 2007-07-23 A | 2007-07-25 A | 125 | 100% |  | smatyas [50%]; etavela [90%]; bgendleman [80%] | 35.2h | 35.2h |
| 128 | 1.3.1.5.4 | **Finalize Deliverables** | 2d | 2007-07-25 A | 2007-07-27 A |  | 100% |  |  | 16h | 16h |
| 129 | 1.3.1.5.4.1 | Release Test Plan (Deferred) | 2d | 2007-07-25 A | 2007-07-27 A | 127 | 100% |  | bgendleman | 16h | 16h |

Notes:
- 125: Selenium for Browser, Junit for API

| ID | WBS | Task | Type | Duration | Start | Finish | Predecessors | Complete | Remaining | Baseline start | Baseline finish | Baseline duration | Total slack | Free slack | Constraint | Resources | Work | Actual work |
| --- | --- | --- | --- | --- | --- | --- | --- | --- | --- | --- | --- | --- | --- | --- | --- | --- | --- | --- |
| 130 | 1.3.1.6 | **Environment** |  | 29.7d | 2007-06-18 A | 2007-07-27 A |  | 100% |  |  |  |  |  |  |  |  | 519.6h | 519.6h |
| 131 | 1.3.1.6.1 | Create and Revise ARC Document |  | 1d | 2007-07-10 A | 2007-07-10 A |  | 100% |  |  |  |  |  |  | start no earlier than 2007-07-10 | bgendleman | 8h | 8h |
| 132 | 1.3.1.6.2 | Work with Systems to Establish Dev and QA Boxes |  | 1d | 2007-06-18 A | 2007-07-27 A |  | 100% |  |  |  |  |  |  | finish no earlier than 2007-07-27 | bgendleman | 8h | 8h |
| 133 | 1.3.1.6.3 | Craft Draft Build and Deploy Plan |  | 4.2w | 2007-06-29 A | 2007-07-27 A |  | 100% |  |  |  |  |  |  | finish no earlier than 2007-07-27 | pduvall; aglover; smatyas [25%]; bgendleman [10%]; etavela [10%] | 411.6h | 411.6h |
| 134 | 1.3.1.6.4 | Integrate Automation Scripts to Support Dev to QA Builds |  | 1w | 2007-06-18 A | 2007-06-25 A |  | 100% |  |  |  |  |  |  |  | pduvall; aglover; etavela [10%] | 84h | 84h |
| 135 | 1.3.1.6.5 | Integrate Test Suite into Gforge (deferred) |  | 2d | 2007-07-25 A | 2007-07-27 A | 127 | 100% |  |  |  |  |  |  |  | smatyas [50%] | 8h | 8h |
| 136 | 1.3.1.7 | **Configuration and Change Management** |  | 29.7d | 2007-06-18 A | 2007-07-27 A |  | 100% |  |  |  |  |  |  |  |  | 403.92h | 403.92h |
| 137 | 1.3.1.7.1 | Manage Gforge Content |  | 29.7d | 2007-06-18 A | 2007-07-27 A |  | 100% |  |  |  |  |  |  | finish no earlier than 2007-07-27 | bgendleman [80%]; etavela [90%] | 403.92h | 403.92h |
| 138 | 1.3.1.8 | Elaboration 1 Complete | milestone | 0d | 2007-07-27 A | 2007-07-27 A | 129 | 100% |  |  |  |  |  |  | start no earlier than 2007-06-27 |  |  |  |
| 139 | 1.3.2 | **Elaboration - Iteration 2** |  | 29.7d | 2007-07-27 A | 2007-09-06 | 138 | 23% | 22.75d | 2007-05-15 | 2007-05-16 | 1d? | -1d | 0d |  |  | 2689.6h | 793.93h |
| 140 | 1.3.2.1 | **Project Management** |  | 28.7d | 2007-07-27 A | 2007-09-05 |  | 51% | 14.05d |  |  |  | 0d |  |  | bgendleman | 1019.2h | 535.13h |
| 141 | 1.3.2.1.1 | Dev Team Iteration Plan |  | 1d | 2007-07-31 A | 2007-07-31 A |  | 100% |  |  |  |  |  |  | start no earlier than 2007-07-31 | bgendleman; etavela [90%]; smatyas [50%]; bmason; tparnell | 35.2h | 35.2h |
| 142 | 1.3.2.1.2 | E1 Assessment |  | 0.5d | 2007-07-30 A | 2007-07-30 A |  | 100% |  |  |  |  |  |  |  | bgendleman; etavela [90%] | 4h | 4h |
| 143 | 1.3.2.1.3 | E2 Review |  | 1d | 2007-08-13 | 2007-08-13 |  |  |  |  |  |  | -96d | 0d | start no earlier than 2007-08-13 | bgendleman | 8h |  |
| 144 | 1.3.2.1.4 | Weekly Status Meetings |  | 3d | 2007-08-01 A | 2007-09-05 |  | 20% | 2.4d |  |  |  | 0d |  | finish no earlier than 2007-09-05 | bgendleman | 24h | 4.8h |
| 145 | 1.3.2.1.5 | Hold Dev to QA Handoff |  | 2d | 2007-08-16 A | 2007-08-17 |  | 50% | 1d |  |  |  | -86d | 0d | start no earlier than 2007-08-16 | bgendleman [80%]; smatyas [50%]; etavela [90%]; pduvall | 51.2h | 25.6h |
| 146 | 1.3.2.1.6 | Plan for Next Iteration |  | 2d | 2007-08-24 A | 2007-08-27 |  | 50% | 1d |  |  |  | -92d | 0d | start no earlier than 2007-08-24 | bgendleman | 16h | 8h |
| 147 | 1.3.2.1.7 | **Finalize Deliverables** |  | 22.7d | 2007-07-27 A | 2007-08-28 |  | 53% | 10.75d |  |  |  | 0d |  |  | bgendleman | 656.8h | 343.18h |
| 148 | 1.3.2.1.7.1 | Deliver E2 Plan |  | 3d | 2007-07-27 A | 2007-08-01 A |  | 100% |  |  |  |  |  |  |  | bgendleman | 24h | 24h |
| 149 | 1.3.2.1.7.2 | Update Risk List |  | 10d | 2007-07-30 A | 2007-08-10 |  | 50% | 5d |  |  |  | 0d |  | finish no earlier than 2007-08-10 | bgendleman | 80h | 40h |
| 150 | 1.3.2.1.7.3 | Establish Plan for Alpha and Beta Releases |  | 17d | 2007-08-06 A | 2007-08-28 |  | 50% | 8.5d |  |  |  | -107d | 0d | start no earlier than 2007-08-06 | bgendleman [80%]; etavela [90%] | 231.2h | 115.6h |
| 151 | 1.3.2.1.7.4 | July Status Report |  | 0.5d | 2007-08-17 | 2007-08-17 |  |  |  |  |  |  | -86d | 0d | finish no earlier than 2007-08-17 | bgendleman | 4h |  |
| 152 | 1.3.2.1.7.5 | Finalize C1 Iteration Plans |  | 17d | 2007-08-03 A | 2007-08-27 |  | 50% | 8.5d |  |  |  | -106d | 0d | start no earlier than 2007-08-03 | bgendleman | 136h | 68h |
| 153 | 1.3.2.2 | **Requirements** |  | 24.7d | 2007-07-27 A | 2007-08-30 |  | 17% | 20.5d |  |  |  | -6d | 0d |  |  | 456h | 86.4h |
| 154 | 1.3.2.2.1 | Incorporate Stakeholder Feedback on Vision and Supp Spec |  | 16d | 2007-08-01 A | 2007-08-22 |  | 20% | 12.8d |  |  |  | -103d | 0d | start no earlier than 2007-08-01 | bgendleman | 128h | 25.6h |
| 155 | 1.3.2.2.2 | Incorporate Stakeholder Feedback on E1 Use Cases |  | 3d | 2007-07-27 A | 2007-08-01 |  | 20% | 2.4d |  |  |  | -87.3d | 0d |  | bgendleman | 24h | 4.8h |
| 156 | 1.3.2.2.3 | UX Modeling/Wireframes (from E1 deferred) |  | 5d | 2007-08-08 | 2007-08-14 | 160 |  |  |  |  |  | -109d | 0d |  | bgendleman [50%]; mrehuss | 60h |  |
| 157 | 1.3.2.2.4 | UI Mockups for Prioritized Use Cases |  | 7d | 2007-08-15 | 2007-08-23 | 156 |  |  |  |  |  | -109d | 0d |  | bgendleman [50%]; mrehuss | 84h |  |
| 158 | 1.3.2.2.5 | Stylesheet Framework (from E1 deferred) |  | 5d | 2007-08-24 | 2007-08-30 | 157 |  |  |  |  |  | -109d | 0d |  | bgendleman [80%]; lpower | 72h |  |
| 159 | 1.3.2.2.6 | Capture Special Requirements for SNPs |  | 5d | 2007-08-02 A | 2007-08-08 |  | 20% | 4d |  |  |  | -93d | 0d | start no earlier than 2007-08-02 | bgendleman | 40h | 8h |

Notes:
- 156: Validate Project Data Files / Manage Project Permissions
- 159: What's different about SNP domain model / SNP Vocabulary (where do SNP terms, experiment types)

| ID | WBS | Task | Duration | Start | Finish | Predecessors | Complete | Remaining | Total slack | Free slack | Constraint | Resources | Work | Actual work |
| --- | --- | --- | --- | --- | --- | --- | --- | --- | --- | --- | --- | --- | --- | --- |
| 160 | 1.3.2.2.7 | **Detail E2 Use Cases** | 3d | 2007-08-03 A | 2007-08-07 A |  | 100% |  |  |  |  | bgendleman | 48h | 48h |
| 161 | 1.3.2.2.7.1 | UC Download Project Data (from E1 deferred) | 0.5d | 2007-08-03 A | 2007-08-03 A |  | 100% |  |  |  | start no earlier than 2007-08-03 | bgendleman | 4h | 4h |
| 162 | 1.3.2.2.7.2 | UC Manage Users | 0.5d | 2007-08-03 A | 2007-08-03 A | 161 | 100% |  |  |  |  | bgendleman | 4h | 4h |
| 163 | 1.3.2.2.7.3 | Validate Project Data Files: Define Validation Rules | 1d | 2007-08-06 A | 2007-08-06 A | 162 | 100% |  |  |  | start no earlier than 2007-08-03 | bgendleman | 8h | 8h |
| 164 | 1.3.2.2.7.4 | UC Manage Project Permissions | 1d | 2007-08-07 A | 2007-08-07 A | 163 | 100% |  |  |  | start no earlier than 2007-08-02 | bgendleman | 8h | 8h |
| 165 | 1.3.2.2.8 | **Detail C1 Use Cases** | 3d | 2007-08-08 A | 2007-08-10 | 160 | 7% | 2.8d | -2d | 0d |  |  |  |  |
| 166 | 1.3.2.2.8.1 | UC Navigate Repository | 1d | 2007-08-08 A | 2007-08-08 |  | 20% | 0.8d | -95d | 0d |  |  |  |  |
| 167 | 1.3.2.2.8.2 | UC Search Repository | 1d | 2007-08-09 | 2007-08-09 | 166 |  |  | -95d | 0d |  |  |  |  |
| 168 | 1.3.2.2.8.3 | UC Search Using Filters | 1d | 2007-08-10 | 2007-08-10 | 167 |  |  | -95d | 0d |  |  |  |  |
| 169 | 1.3.2.3 | **Analysis and Design** | 15.7d | 2007-07-27 A | 2007-08-17 |  | 17% | 12.96d | -4d | 0d |  |  | 304h | 54h |
| 170 | 1.3.2.3.1 | **Use-Case Design** | 6.2d | 2007-08-06 | 2007-08-14 |  |  |  | -112d | 0d |  |  | 40h |  |
| 171 | 1.3.2.3.1.1 | Manage Project Permissions | 3d | 2007-08-08 | 2007-08-13 | 224 |  |  | -88.2d | 0d | start no earlier than 2007-08-06 | etavela | 24h |  |
| 172 | 1.3.2.3.1.2 | Validate Project Data Files | 1d | 2007-08-13 | 2007-08-14 | 171 |  |  | -88.2d | 0d |  | etavela | 8h |  |
| 173 | 1.3.2.3.1.3 | Login | 1d | 2007-08-06 | 2007-08-06 |  |  |  | -112d | 0d | start no earlier than 2007-08-06 | jpike | 8h |  |
| 174 | 1.3.2.3.2 | Logical Model Final Draft | 2d | 2007-08-06 A | 2007-08-07 A | 191 | 100% |  |  |  |  | rsrinavasa | 16h | 16h |
| 175 | 1.3.2.3.3 | **Subsystem Design** | 13.7d | 2007-07-27 A | 2007-08-15 |  | 16% | 11.47d | -2d | 0d |  |  | 216h | 38h |
| 176 | 1.3.2.3.3.1 | FileAccessService | 4d | 2007-08-07 | 2007-08-10 | 173 |  |  | -112d | 0d |  | jpike | 32h |  |
| 177 | 1.3.2.3.3.2 | MageTabParser: Validation | 4d | 2007-08-06 A | 2007-08-09 | 190 | 50% | 2d | -114d | 0d |  | bmason | 32h | 16h |
| 178 | 1.3.2.3.3.3 | ArrayDataService: Validation | 2d | 2007-08-10 | 2007-08-13 | 177 |  |  | -114d | 0d |  | bmason | 16h |  |
| 179 | 1.3.2.3.3.4 | ArrayDesignService: Validation | 2d | 2007-08-14 | 2007-08-15 | 178 |  |  | -114d | 0d |  | bmason | 16h |  |
| 180 | 1.3.2.3.3.5 | Remote API Grid Implementation | 4d | 2007-08-08 A | 2007-08-13 | 174 | 25% | 3d | -97d | 0d |  | rsrinavasa; tparnell | 64h | 16h |
| 181 | 1.3.2.3.3.6 | PermissionsManagementService | 3d | 2007-07-27 A | 2007-08-01 |  | 25% | 2.25d | -108.3d | 0d |  | tparnell | 24h | 6h |
| 182 | 1.3.2.3.3.7 | Authorization Mechanism | 4d | 2007-08-01 | 2007-08-07 | 181 |  |  | -108.3d | 0d |  | tparnell | 32h |  |
| 183 | 1.3.2.3.4 | External Review: Grid API | 1d | 2007-08-14 | 2007-08-14 | 180 |  |  | -97d | 0d |  | etavela; jpike | 16h |  |

Notes:
- 163: Validation rules for: / MAGE-TAB (all) / Affymetrix CDF, CHP, CEL / Illumina design and data files / Genepix GPR and GAL
- 180: attended a a day and a half meeting
- 181: csm meeting needed / no csm integration / potential dependency on login and authentication

| ID | WBS | Task | Duration | Start | Finish | Predecessors | Complete | Remaining | Total slack | Free slack | Constraint | Resources | Work | Actual work |
| --- | --- | --- | --- | --- | --- | --- | --- | --- | --- | --- | --- | --- | --- | --- |
| 184 | 1.3.2.3.5 | **Finalize Deliverables** | 2d | 2007-08-16 | 2007-08-17 |  |  |  | -86d | 0d |  |  | 16h |  |
| 185 | 1.3.2.3.5.1 | Update Software Architecture Document | 2d | 2007-08-16 | 2007-08-17 | 179 |  |  | -100d | 0d | start no earlier than 2007-08-16 | etavela | 16h |  |
| 186 | 1.3.2.4 | **Implementation** | 27d | 2007-08-01 A | 2007-09-06 |  | 18% | 22.07d | -10.8d | 0d |  |  | 552h | 95.2h |
| 187 | 1.3.2.4.1 | **E1 Completion** | 10d | 2007-08-01 A | 2007-08-14 |  | 56% | 4.36d | 0d |  |  |  | 176h | 91.2h |
| 188 | 1.3.2.4.1.1 | Complete Hibernate Mappings | 10d | 2007-08-01 A | 2007-08-14 |  | 90% | 1d | -97d | 0d | start no earlier than 2007-08-01 | tparnell | 80h | 72h |
| 189 | 1.3.2.4.1.2 | Remote Java API | 4.2d | 2007-08-01 A | 2007-08-07 |  | 57% | 1.8d | -88.2d | 0d | start no earlier than 2007-08-01 | etavela; tparnell | 48h | 19.2h |
| 190 | 1.3.2.4.1.3 | Complete MAGE-TAB parsing | 3d | 2007-08-01 | 2007-08-03 |  |  |  | -114d | 0d | start no earlier than 2007-08-01 | bmason | 24h |  |
| 191 | 1.3.2.4.1.4 | Complete MAGE-TAB translation | 3d | 2007-08-01 | 2007-08-03 |  |  |  | -90d | 0d | start no earlier than 2007-08-01 | bmason | 24h |  |
| 192 | 1.3.2.4.2 | **Subsystem Implementation** | 20.7d | 2007-08-07 | 2007-09-04 |  |  |  | -112d | 0d |  |  | 232h |  |
| 193 | 1.3.2.4.2.1 | FileAccessService | 5d | 2007-08-13 | 2007-08-17 | 176 |  |  | -112d | 0d |  | jpike | 40h |  |
| 194 | 1.3.2.4.2.2 | MageTabParser: Validation | 5d | 2007-08-16 | 2007-08-22 | 179 |  |  | -114d | 0d |  | bmason | 40h |  |
| 195 | 1.3.2.4.2.3 | ArrayDataService: Validation | 3d | 2007-08-23 | 2007-08-27 | 194 |  |  | -114d | 0d |  | bmason | 24h |  |
| 196 | 1.3.2.4.2.4 | ArrayDesignService: Validation | 2d | 2007-08-28 | 2007-08-29 | 195 |  |  | -114d | 0d |  | bmason | 16h |  |
| 197 | 1.3.2.4.2.5 | PermissionsManagement | 5d | 2007-08-07 | 2007-08-14 | 182 |  |  | -98.3d | 0d |  | tparnell | 40h |  |
| 198 | 1.3.2.4.2.6 | Object Access Authorization Mechanism | 2d | 2007-08-14 | 2007-08-16 | 197 |  |  | -98.3d | 0d |  | jpike; tparnell | 32h |  |
| 199 | 1.3.2.4.2.7 | Remote API Grid Implementation | 5d | 2007-08-29 | 2007-09-04 | 210 |  |  | -112d | 0d | start no earlier than 2007-08-27 | tparnell | 40h |  |
| 200 | 1.3.2.4.3 | **Implement Use Cases** | 5d | 2007-08-16 A | 2007-08-23 |  | 10% | 4.5d | 0d |  |  |  | 40h | 4h |
| 201 | 1.3.2.4.3.1 | Manage Project Permissions | 3d | 2007-08-16 | 2007-08-21 | 217, 197 |  |  | -88.2d | 0d |  | etavela | 24h |  |
| 202 | 1.3.2.4.3.2 | Validate Project Data Files | 1d | 2007-08-21 | 2007-08-22 | 201 |  |  | -88.2d | 0d |  | etavela | 8h |  |
| 203 | 1.3.2.4.3.3 | Login | 1d | 2007-08-22 A | 2007-08-23 | 202 | 50% | 0.5d | -110.2d | 0d |  | jpike | 8h | 4h |
| 204 | 1.3.2.4.4 | **Implement Additional Array Design Parsers** | 10d | 2007-08-20 | 2007-08-31 |  |  |  | -100d | 0d |  |  | 40h |  |
| 205 | 1.3.2.4.4.1 | Illumina | 3d | 2007-08-20 | 2007-08-22 | 193 |  |  | -112d | 0d |  | jpike | 24h |  |
| 206 | 1.3.2.4.4.2 | Affymetrix SNP | 2d | 2007-08-30 | 2007-08-31 | 196 |  |  | -114d | 0d |  | bmason | 16h |  |
| 207 | 1.3.2.4.5 | **Implement Additional Array Data Parsers** | 11d | 2007-08-23 | 2007-09-06 |  |  |  | -100d | 0d |  |  | 64h |  |
| 208 | 1.3.2.4.5.1 | Illumina | 4d | 2007-09-03 | 2007-09-06 | 206 |  |  | -114d | 0d |  | bmason | 32h |  |
| 209 | 1.3.2.4.5.2 | Affymetrix SNP | 2d | 2007-08-23 | 2007-08-24 | 205 |  |  | -112d | 0d |  | jpike | 16h |  |
| 210 | 1.3.2.4.5.3 | Affymetrix CHP | 2d | 2007-08-27 | 2007-08-28 | 209 |  |  | -112d | 0d |  | jpike | 16h |  |

Notes:
- 200: The bulk of the implementation work is in the Subsystems -- this is the front end code to tie functionality together

| ID | WBS | Task | Type | Duration | Start | Finish | Predecessors | Complete | Remaining | Baseline start | Baseline finish | Baseline duration | Total slack | Free slack | Constraint | Resources | Work | Actual work |
| --- | --- | --- | --- | --- | --- | --- | --- | --- | --- | --- | --- | --- | --- | --- | --- | --- | --- | --- |
| 211 | 1.3.2.5 | **Test** |  | 14d | 2007-08-14 | 2007-09-03 |  |  |  |  |  |  | -103.2d | 0d |  |  | 88h |  |
| 212 | 1.3.2.5.1 | Validate Project Data Files Test Cases |  | 1d | 2007-08-23 | 2007-08-24 | 203 |  |  |  |  |  | -110.2d | 0d |  | etavela | 8h |  |
| 213 | 1.3.2.5.2 | Manage Permission Test Cases |  | 1d | 2007-08-24 | 2007-08-27 | 212 |  |  |  |  |  | -110.2d | 0d |  | etavela | 8h |  |
| 214 | 1.3.2.5.3 | Import Data Files Test Suite |  | 1d | 2007-08-27 | 2007-08-28 | 213 |  |  |  |  |  | -110.2d | 0d |  | etavela | 8h |  |
| 215 | 1.3.2.5.4 | Remote Java API Test Suite |  | 4d | 2007-08-28 | 2007-09-03 | 214 |  |  |  |  |  | -110.2d | 0d |  | smatyas [50%]; etavela | 48h |  |
| 216 | 1.3.2.5.5 | **Finalize Deliverables** |  | 12.8d | 2007-08-14 | 2007-08-31 |  |  |  |  |  |  | -99d | 0d |  |  | 16h |  |
| 217 | 1.3.2.5.5.1 | Release Test Plan |  | 2d | 2007-08-14 | 2007-08-16 | 172 |  |  |  |  |  | -88.2d | 0d |  | etavela | 16h |  |
| 218 | 1.3.2.5.5.2 | Release Build E2A | milestone | 0d | 2007-08-17 | 2007-08-17 |  |  |  |  |  |  | -99d | 0d | start no earlier than 2007-08-17 |  |  |  |
| 219 | 1.3.2.5.5.3 | Release Build E2B | milestone | 0d | 2007-08-31 | 2007-08-31 |  |  |  |  |  |  | -109d | 0d | start no earlier than 2007-08-31 |  |  |  |
| 220 | 1.3.2.6 | **Environment** |  | 12d | 2007-08-01 A | 2007-08-16 |  | 28% | 8.63d |  |  |  | -5d | 0d |  |  | 70.4h | 23.2h |
| 221 | 1.3.2.6.1 | Review Build and Deploy Plan with SCM Initiative |  | 0.4d | 2007-08-01 A | 2007-08-01 A |  | 100% |  |  |  |  |  |  | start no earlier than 2007-08-01 | aglover; pduvall | 6.4h | 6.4h |
| 222 | 1.3.2.6.2 | Review and Demonstration Meetings (Eng + Prod / QA / Systems |  | 3d | 2007-08-01 A | 2007-08-06 | 221 | 25% | 2.25d |  |  |  | -90.4d | 0d |  |  |  |  |
| 223 | 1.3.2.6.3 | Complete Acquisition of DEV and QA Environment |  | 2d | 2007-08-02 A | 2007-08-03 |  | 50% | 1d |  |  |  | -1d | 0d | finish no earlier than 2007-08-02 |  |  |  |
| 224 | 1.3.2.6.4 | Development Process "Quick Start" |  | 1d | 2007-08-07 | 2007-08-08 | 189 |  |  |  |  |  | -88.2d | 0d |  | etavela | 8h |  |
| 225 | 1.3.2.6.5 | Complete DEV to QA Integration |  | 3d | 2007-08-07 A | 2007-08-09 | 223 | 35% | 1.95d |  |  |  | 0d |  | finish no earlier than 2007-08-09 | aglover; pduvall | 48h | 16.8h |
| 226 | 1.3.2.6.6 | Incorporate Automated Deployment Process |  | 2d | 2007-08-15 | 2007-08-16 | 225 |  |  |  |  |  | -85d | 0d | finish no earlier than 2007-08-16 | smatyas [50%] | 8h |  |
| 227 | 1.3.2.7 | **Configuration and Change Management** |  | 25d | 2007-07-27 | 2007-08-31 |  |  |  |  |  |  | -95.3d | 0d |  |  | 200h |  |
| 228 | 1.3.2.7.1 | Manage Gforge Content |  | 25d | 2007-07-27 | 2007-08-31 |  |  |  |  |  |  | -109.3d | 0d |  | bgendleman | 200h |  |
| 229 | 1.3.2.8 | Elaboration 2 Complete | milestone | 0d | 2007-09-06 | 2007-09-06 | 199, 208 |  |  |  |  |  | -114d | 0d | start no earlier than 2007-08-31 |  |  |  |
| 230 | 1.4 | **Construction Phase** |  | 60d | 2007-09-07 | 2007-11-29 | 73 |  |  | 2007-05-17 | 2007-05-18 | 1d? | -100d | 0d |  |  | 3728h |  |
| 231 | 1.4.1 | **Construction - Iteration 1** |  | 20d | 2007-09-07 | 2007-10-04 | 229 |  |  | 2007-05-17 | 2007-05-18 | 1d? | -100d | 0d |  |  | 1532.8h |  |
| 232 | 1.4.1.1 | **Project Management** |  | 20d | 2007-09-07 | 2007-10-04 |  |  |  |  |  |  | -60d | 0d |  |  | 403.2h |  |
| 233 | 1.4.1.1.1 | Weekly Status Meetings |  | 20d | 2007-09-07 | 2007-10-04 |  |  |  |  |  |  | -74d | 0d |  |  |  |  |
| 234 | 1.4.1.1.2 | Dev Team Iteration Plan |  | 1d | 2007-09-07 | 2007-09-07 |  |  |  |  |  |  | -58d | 0d |  |  |  |  |
| 235 | 1.4.1.1.3 | Meet with Documentation to support UC Transition |  | 1d | 2007-09-10 | 2007-09-10 | 234 |  |  |  |  |  | -58d | 0d |  |  |  |  |
| 236 | 1.4.1.1.4 | Meet with App Support to Validate UC's and Overall Product Releases |  | 1d | 2007-09-11 | 2007-09-11 | 235 |  |  |  |  |  | -58d | 0d |  |  |  |  |
| 237 | 1.4.1.1.5 | E2 Assessment |  | 1d | 2007-09-12 | 2007-09-12 | 236 |  |  |  |  |  | -58d | 0d |  |  |  |  |
| 238 | 1.4.1.1.6 | C1 Review |  | 1d | 2007-09-21 | 2007-09-21 |  |  |  |  |  |  | -65d | 0d | start no earlier than 2007-09-21 |  |  |  |
| 239 | 1.4.1.1.7 | Plan for Next Iteration |  | 2d | 2007-10-01 | 2007-10-02 |  |  |  |  |  |  | -72d | 0d | start no earlier than 2007-10-01 |  |  |  |

| ID | WBS | Task | Duration | Start | Finish | Predecessors | Total slack | Free slack | Constraint | Resources | Work |
| --- | --- | --- | --- | --- | --- | --- | --- | --- | --- | --- | --- |
| 240 | 1.4.1.1.8 | **Finalize Deliverables** | 17d | 2007-09-07 | 2007-10-01 |  | -57d | 0d |  |  | 403.2h |
| 241 | 1.4.1.1.8.1 | Deliver C1 Plan | 3d | 2007-09-07 | 2007-09-11 |  | -57d | 0d |  | bgendleman | 24h |
| 242 | 1.4.1.1.8.2 | Update Risk List | 1d | 2007-09-20 | 2007-09-20 |  | -50d | 0d | finish no earlier than 2007-09-20 | bgendleman | 8h |
| 243 | 1.4.1.1.8.3 | Update Alpha and Beta Release Plan | 17d | 2007-09-07 | 2007-10-01 |  | -71d | 0d | start no earlier than 2007-08-03 | bgendleman [80%]; etavela [90%] | 231.2h |
| 244 | 1.4.1.1.8.4 | August Status Report | 0.5d | 2007-09-07 | 2007-09-07 |  | -54.5d | 0d | finish no earlier than 2007-08-17 | bgendleman | 4h |
| 245 | 1.4.1.1.8.5 | Finalize C2 Iteration Plans | 17d | 2007-09-07 | 2007-10-01 |  | -71d | 0d | start no earlier than 2007-08-03 | bgendleman | 136h |
| 246 | 1.4.1.2 | **Requirements** | 20d | 2007-09-07 | 2007-10-04 |  | -60d | 0d |  |  | 420h |
| 247 | 1.4.1.2.1 | Incorporate Stakeholder Feedback on Vision and Supp Spec | 16d | 2007-09-07 | 2007-09-28 |  | -70d | 0d | start no earlier than 2007-08-01 | bgendleman | 128h |
| 248 | 1.4.1.2.2 | Incorporate Stakeholder Feedback on E2 Use Cases | 16d | 2007-09-07 | 2007-09-28 |  | -70d | 0d |  | bgendleman | 128h |
| 249 | 1.4.1.2.3 | Incorporate Stakeholder Feedback on UI Mockups | 10d | 2007-09-21 | 2007-10-04 |  | -74d | 0d | start no earlier than 2007-09-21 | bgendleman [50%]; mrehfuss | 80h |
| 250 | 1.4.1.2.4 | **Detail C1 Use Cases** | 3.5d | 2007-09-07 | 2007-09-12 |  | -54d | 0d |  |  |  |
| 251 | 1.4.1.2.4.1 | UC Manage Institutional Groups | 1d | 2007-09-07 | 2007-09-07 |  | -68d | 0d |  |  |  |
| 252 | 1.4.1.2.4.2 | UC Update Project Proposal | 0.5d | 2007-09-10 | 2007-09-10 | 251 | -60.5d | 0d |  |  |  |
| 253 | 1.4.1.2.4.3 | UC Register For An Account | 1d | 2007-09-10 | 2007-09-11 | 252 | -60.5d | 0d |  |  |  |
| 254 | 1.4.1.2.4.4 | UC Manage Collaborators | 1d | 2007-09-11 | 2007-09-12 | 253 | -60.5d | 0d |  |  |  |
| 255 | 1.4.1.2.5 | Create C1 Wireframes and Mockups | 3d | 2007-09-12 | 2007-09-17 | 250 | -60.5d | 0d |  | mrehfuss | 24h |
| 256 | 1.4.1.2.6 | **Detail 2.x Use Cases** | 6d | 2007-09-07 | 2007-09-14 |  | -51d | 0d |  |  |  |
| 257 | 1.4.1.2.6.1 | UC Organize Workspace | 2d | 2007-09-07 | 2007-09-10 |  | -65d | 0d |  |  |  |
| 258 | 1.4.1.2.6.2 | UC Approve Project | 0.5d | 2007-09-11 | 2007-09-11 | 257 | -65d | 0d |  |  |  |
| 259 | 1.4.1.2.6.3 | UC Assign Project | 0.5d | 2007-09-11 | 2007-09-11 | 258 | -65d | 0d |  |  |  |
| 260 | 1.4.1.2.6.4 | UC Search for Arrays Using Natural Text | 2d | 2007-09-12 | 2007-09-13 | 259 | -65d | 0d |  |  |  |
| 261 | 1.4.1.2.6.5 | UC Import Contextual Data | 1d | 2007-09-14 | 2007-09-14 | 260 | -65d | 0d |  |  |  |
| 262 | 1.4.1.2.7 | Create 2.x Wireframes and Mockups | 5d | 2007-09-17 | 2007-09-21 | 256 | -65d | 0d |  | mrefhuss; bgendleman [50%] | 60h |
| 263 | 1.4.1.3 | **Analysis and Design** | 17d | 2007-09-07 | 2007-10-01 |  | -57d | 0d |  |  | 134.8h |
| 264 | 1.4.1.3.1 | **Use Case Design** | 8d | 2007-09-10 | 2007-09-19 |  | -54d | 0d |  |  | 48h |
| 265 | 1.4.1.3.1.1 | Manage Institutional Groups | 1d | 2007-09-10 | 2007-09-10 | 251, 271 | -68d | 0d |  | jpike | 8h |
| 266 | 1.4.1.3.1.2 | Register for an Account | 1d | 2007-09-12 | 2007-09-12 | 253, 277 | -61d | 0d |  | tparnell | 8h |
| 267 | 1.4.1.3.1.3 | Manage Collaborators | 1d | 2007-09-13 | 2007-09-13 | 254, 266 | -61d | 0d |  | tparnell | 8h |
| 268 | 1.4.1.3.1.4 | Update Project Proposal | 1d | 2007-09-17 | 2007-09-17 |  | -67d | 0d | start no earlier than 2007-09-17 | etavela | 8h |
| 269 | 1.4.1.3.1.5 | Report on Work Accomplished | 2d | 2007-09-18 | 2007-09-19 | 268 | -67d | 0d | start no earlier than 2007-09-17 | etavela | 16h |

| ID | WBS | Task | Duration | Start | Finish | Predecessors | Total slack | Free slack | Constraint | Resources | Work |
| --- | --- | --- | --- | --- | --- | --- | --- | --- | --- | --- | --- |
| 270 | 1.4.1.3.2 | **Finalize SubSystem Design** | 9d | 2007-09-07 | 2007-09-19 |  | -59d | 0d |  |  | 56h |
| 271 | 1.4.1.3.2.1 | FileAccessService | 1d | 2007-09-07 | 2007-09-07 |  | -68d | 0d |  | jpike | 8h |
| 272 | 1.4.1.3.2.2 | MageTabParser: Validation | 1d | 2007-09-07 | 2007-09-07 |  | -67d | 0d |  | bmason | 8h |
| 273 | 1.4.1.3.2.3 | ArrayDataService: Validation | 1d | 2007-09-18 | 2007-09-18 | 272, 286 | -73d | 0d |  | bmason | 8h |
| 274 | 1.4.1.3.2.4 | ArrayDesignService: Validation | 1d | 2007-09-19 | 2007-09-19 | 273 | -73d | 0d |  | bmason | 8h |
| 275 | 1.4.1.3.2.5 | Remote API Grid Implementation | 1d | 2007-09-07 | 2007-09-07 |  | -67d | 0d |  | tparnell | 8h |
| 276 | 1.4.1.3.2.6 | PermissionsManagementService | 1d | 2007-09-10 | 2007-09-10 | 275 | -67d | 0d |  | tparnell | 8h |
| 277 | 1.4.1.3.2.7 | Authorization Mechanism | 1d | 2007-09-11 | 2007-09-11 | 276 | -67d | 0d |  | tparnell | 8h |
| 278 | 1.4.1.3.3 | External Review: Revised Grid API | 0.5d | 2007-09-18 | 2007-09-18 |  | -64.5d | 0d | start no earlier than 2007-09-18 | etavela [90%]; tparnell | 7.6h |
| 279 | 1.4.1.3.4 | Sumbit Domain Object Model | 2d | 2007-09-19 | 2007-09-20 | 278 | -64d | 0d | start no earlier than 2007-09-19 | etavela | 16h |
| 280 | 1.4.1.3.5 | Update Software Architecture Document | 1d | 2007-10-01 | 2007-10-01 |  | -71d | 0d | start no earlier than 2007-10-01 | etavela [90%] | 7.2h |
| 281 | 1.4.1.4 | **Implementation** | 19d | 2007-09-07 | 2007-10-03 |  | -59d | 0d |  |  | 476.8h |
| 282 | 1.4.1.4.1 | Update Remote Java API | 3d | 2007-09-18 | 2007-09-21 | 278 | -64.5d | 0d |  |  |  |
| 283 | 1.4.1.4.2 | **Complete Elaboration Use Cases** | 17d | 2007-09-07 | 2007-10-01 |  | -57d | 0d |  |  | 264h |
| 284 | 1.4.1.4.2.1 | Implement UC Login | 1d | 2007-09-07 | 2007-09-07 |  | -55d | 0d |  | jpike | 8h |
| 285 | 1.4.1.4.2.2 | Implement UC Acquire Project Data via API | 1d | 2007-09-07 | 2007-09-07 |  | -55d | 0d |  | tparnell | 8h |
| 286 | 1.4.1.4.2.3 | Implement UC Import Project Data | 3d | 2007-09-13 | 2007-09-17 |  | -73d | 0d | start no earlier than 2007-09-13 | bmason | 24h |
| 287 | 1.4.1.4.2.4 | Implement UC Manage Project Permissions | 2d | 2007-09-07 | 2007-09-10 |  | -56d | 0d |  | tparnell | 16h |
| 288 | 1.4.1.4.2.5 | Implement Validate Project Data | 1d | 2007-09-10 | 2007-09-10 |  | -56d | 0d | start no earlier than 2007-09-10 | bmason | 8h |
| 289 | 1.4.1.4.2.6 | Integrate Stylesheet Throughout | 5d | 2007-09-20 | 2007-09-26 | 270, 293 | -73d | 0d |  | jpike; bmason; tparnell; etavela [80%] | 152h |
| 290 | 1.4.1.4.2.7 | Implement UC Manage Project Data Files (to support sample to file allocation) | 3d | 2007-09-27 | 2007-10-01 | 289 | -73d | 0d |  | jpike | 24h |
| 291 | 1.4.1.4.2.8 | Implement UC Submit Project Proposal | 3d | 2007-09-24 | 2007-09-26 |  | -72d | 0d | start no earlier than 2007-09-24 | etavela | 24h |
| 292 | 1.4.1.4.3 | **Begin C1 Use Cases** | 16d | 2007-09-11 | 2007-10-02 |  | -58d | 0d |  |  | 76.8h |
| 293 | 1.4.1.4.3.1 | Manage Institutional Groups | 2d | 2007-09-11 | 2007-09-12 | 265 | -68d | 0d |  | jpike | 16h |
| 294 | 1.4.1.4.3.2 | Manage Collaborators | 2d | 2007-09-19 | 2007-09-20 | 295, 267 | -64d | 0d |  | tparnell | 16h |
| 295 | 1.4.1.4.3.3 | Register for an Account | 2d | 2007-09-17 | 2007-09-18 |  | -64d | 0d | start no earlier than 2007-09-17 | tparnell | 16h |
| 296 | 1.4.1.4.3.4 | Report on Work Accomplished | 4d | 2007-09-27 | 2007-10-02 | 269, 291 | -72d | 0d |  | etavela [90%] | 28.8h |

| ID | WBS | Task | Type | Duration | Start | Finish | Predecessors | Baseline start | Baseline finish | Baseline duration | Total slack | Free slack | Constraint | Resources | Work |
| --- | --- | --- | --- | --- | --- | --- | --- | --- | --- | --- | --- | --- | --- | --- | --- |
| 297 | 1.4.1.4.4 | **Complete Subsystem Implementation** |  | 19d | 2007-09-07 | 2007-10-03 |  |  |  |  | -59d | 0d |  |  | 136h |
| 298 | 1.4.1.4.4.1 | FileAccessService |  | 2d | 2007-10-02 | 2007-10-03 | 290 |  |  |  | -73d | 0d |  | jpike | 16h |
| 299 | 1.4.1.4.4.2 | MageTabParser: Validation |  | 2d | 2007-09-18 | 2007-09-19 | 286 |  |  |  | -67d | 0d |  | bmason | 16h |
| 300 | 1.4.1.4.4.3 | ArrayDataService: Validation |  | 2d | 2007-09-20 | 2007-09-21 | 299 |  |  |  | -67d | 0d |  | bmason | 16h |
| 301 | 1.4.1.4.4.4 | ArrayDesignService: Validation |  | 2d | 2007-09-24 | 2007-09-25 | 300 |  |  |  | -67d | 0d |  | bmason | 16h |
| 302 | 1.4.1.4.4.5 | PermissionsManagement |  | 2d | 2007-09-07 | 2007-09-10 |  |  |  |  | -56d | 0d |  | tparnell | 16h |
| 303 | 1.4.1.4.4.6 | Object Access Authorization Mechanism |  | 2d | 2007-09-07 | 2007-09-10 |  |  |  |  | -56d | 0d |  | tparnell | 16h |
| 304 | 1.4.1.4.4.7 | Remote API Grid Implementation |  | 5d | 2007-09-07 | 2007-09-13 |  |  |  |  | -59d | 0d |  | tparnell | 40h |
| 305 | 1.4.1.5 | **Test** |  | 18d | 2007-09-07 | 2007-10-02 |  |  |  |  | -58d | 0d |  |  | 37.6h |
| 306 | 1.4.1.5.1 | Project Data Files Test Suite |  | 1d | 2007-09-07 | 2007-09-07 |  |  |  |  | -55d | 0d |  | jpike | 8h |
| 307 | 1.4.1.5.2 | Validation Test Suite |  | 1d | 2007-09-07 | 2007-09-07 |  |  |  |  | -55d | 0d |  | bmason | 8h |
| 308 | 1.4.1.5.3 | Update Elaboration Test Suite |  | 3d | 2007-09-28 | 2007-10-02 |  |  |  |  | -72d | 0d | start no earlier than 2007-09-28 | etavela [90%] | 21.6h |
| 309 | 1.4.1.5.4 | Release QA Build C1A | milestone | 0d | 2007-09-14 | 2007-09-14 |  |  |  |  | -59d | 0d | start no earlier than 2007-09-14 | smatyas [50%] |  |
| 310 | 1.4.1.5.5 | Release QA Build C1B | milestone | 0d | 2007-09-28 | 2007-09-28 |  |  |  |  | -69d | 0d | start no earlier than 2007-09-28 | smatyas [50%] |  |
| 311 | 1.4.1.6 | **Environment** |  | 12d | 2007-09-10 | 2007-09-25 |  |  |  |  | -53d | 0d |  |  | 60.4h |
| 312 | 1.4.1.6.1 | Acquire STAGE Environment |  | 0.5d | 2007-09-10 | 2007-09-10 |  |  |  |  | -67d | 0d | start no earlier than 2007-09-10 | smatyas [50%]; bgendleman [50%] | 4h |
| 313 | 1.4.1.6.2 | Initiate DEV to QA to STAGE Deployment |  | 10d | 2007-09-10 | 2007-09-24 | 312 |  |  |  | -67d | 0d |  | smatyas [50%] | 40h |
| 314 | 1.4.1.6.3 | Update Build and Deploy Plan with SCM Initiative |  | 1d | 2007-09-24 | 2007-09-25 | 313 |  |  |  | -67d | 0d |  | etavela [80%]; smatyas [50%]; bgendleman [50%] | 14.4h |
| 315 | 1.4.1.6.4 | Update ARC Document |  | 0.5d | 2007-09-25 | 2007-09-25 | 314 |  |  |  | -67d | 0d |  | bgendleman [50%] | 2h |
| 316 | 1.4.1.7 | **Configuration and Change Management** |  | 20d | 2007-09-07 | 2007-10-04 |  |  |  |  | -100d | 0d |  |  |  |
| 317 | 1.4.1.7.1 | Manage G-Forge Content |  | 20d | 2007-09-07 | 2007-10-04 |  |  |  |  | -114d | 0d | start no earlier than 2007-09-07 |  |  |
| 318 | 1.4.1.8 | C1 Complete | milestone | 0d | 2007-10-04 | 2007-10-04 | 317 |  |  |  | -114d | 0d |  |  |  |
| 319 | 1.4.2 | **Construction - Iteration 2** |  | 20d | 2007-10-05 | 2007-11-01 | 318 | 2007-05-17 | 2007-05-18 | 1d? | -100d | 0d |  |  | 1409.6h |
| 320 | 1.4.2.1 | **Project Management** |  | 20d | 2007-10-05 | 2007-11-01 |  |  |  |  | -100d | 0d |  |  | 284.8h |
| 321 | 1.4.2.1.1 | Weekly Status Meetings |  | 20d | 2007-10-05 | 2007-11-01 |  |  |  |  | -99d | 0d |  | bgendleman | 160h |
| 322 | 1.4.2.1.2 | Dev Team Iteration Plan |  | 1d | 2007-10-05 | 2007-10-05 |  |  |  |  | -80d | 0d |  | etavela [90%] | 7.2h |
| 323 | 1.4.2.1.3 | Prepare Alpha Release Plan and Organization |  | 1.67d | 2007-10-10 | 2007-10-11 |  |  |  |  | -83.67d | 0d | start no earlier than 2007-10-10 | bgendleman; etavela [80%] | 24h |
| 324 | 1.4.2.1.4 | Organize Feedback from Alpha Testers |  | 3.33d | 2007-10-15 | 2007-10-18 |  |  |  |  | -88.33d | 0d | start no earlier than 2007-10-15 | etavela [90%] | 24h |
| 325 | 1.4.2.1.5 | Evolve RMP to support QA Process |  | 3d | 2007-10-05 | 2007-10-09 |  |  |  |  | -82d | 0d |  | bgendleman | 24h |
| 326 | 1.4.2.1.6 | C1 Assessment |  | 2.22d | 2007-10-05 | 2007-10-09 |  |  |  |  | -81.22d | 0d |  | etavela [90%] | 16h |
| 327 | 1.4.2.1.7 | C2 Review |  | 1d | 2007-10-18 | 2007-10-18 |  |  |  |  | -92d | 0d | start no earlier than 2007-10-18 | bgendleman [50%] | 4h |
| 328 | 1.4.2.1.8 | Plan for Next Iteration |  | 1d | 2007-10-19 | 2007-10-19 | 327 |  |  |  | -90d | 0d |  | bgendleman [50%] | 4h |

| ID | WBS | Task | Duration | Start | Finish | Predecessors | Total slack | Free slack | Constraint | Resources | Work |
| --- | --- | --- | --- | --- | --- | --- | --- | --- | --- | --- | --- |
| 329 | 1.4.2.1.9 | **Finalize Deliverables** | 17d | 2007-10-05 | 2007-10-29 |  | -97d | 0d |  |  | 21.6h |
| 330 | 1.4.2.1.9.1 | Deliver C2 Plan | 1d | 2007-10-05 | 2007-10-05 |  | -80d | 0d |  | etavela [90%] | 7.2h |
| 331 | 1.4.2.1.9.2 | Update Beta Release Plan | 1d | 2007-10-19 | 2007-10-19 | 327 | -92d | 0d |  | bgendleman [50%]; etavela [80%] | 10.4h |
| 332 | 1.4.2.1.9.3 | September Status Report | 1d | 2007-10-15 | 2007-10-15 |  | -86d | 0d | start no earlier than 2007-10-15 | bgendleman [50%] | 4h |
| 333 | 1.4.2.1.9.4 | Finalize C3 Iteration Plans | 1d | 2007-10-26 | 2007-10-26 | 331 | -96d | 0d | start no earlier than 2007-10-26 |  |  |
| 334 | 1.4.2.1.9.5 | Update Risk List | 1d | 2007-10-29 | 2007-10-29 | 333 | -96d | 0d |  |  |  |
| 335 | 1.4.2.2 | **Requirements** | 17d | 2007-10-05 | 2007-10-29 |  | -97d | 0d |  |  | 364h |
| 336 | 1.4.2.2.1 | Incorporate Stakeholder Feedback on Vision and Supp Spec | 16d | 2007-10-05 | 2007-10-26 |  | -96d | 0d | start no earlier than 2007-08-01 | bgendleman | 128h |
| 337 | 1.4.2.2.2 | Incorporate Stakeholder Feedback on C1 Use Cases | 16d | 2007-10-05 | 2007-10-26 |  | -96d | 0d |  | bgendleman | 128h |
| 338 | 1.4.2.2.3 | Incorporate Stakeholder Feedback on C1 UI Mockups | 10d | 2007-10-05 | 2007-10-18 |  | -97d | 0d | start no earlier than 2007-09-21 | bgendleman [50%]; mrehfuss | 80h |
| 339 | 1.4.2.2.4 | Incorporate Stakeholder Feedback on 2.x Mockups | 2d | 2007-10-19 | 2007-10-22 | 338 | -97d | 0d |  | bgendleman [50%] | 8h |
| 340 | 1.4.2.2.5 | Collaborate with Documentation to Support Online Help, User Guides | 5d | 2007-10-23 | 2007-10-29 | 339 | -97d | 0d |  | bgendleman [50%] | 20h |
| 341 | 1.4.2.2.6 | **Update 2.x Use Cases** | 3.5d | 2007-10-05 | 2007-10-10 |  | -83.5d | 0d |  |  |  |
| 342 | 1.4.2.2.6.1 | UC Manage Institutional Groups | 1d | 2007-10-05 | 2007-10-05 |  | -83.5d | 0d |  |  |  |
| 343 | 1.4.2.2.6.2 | UC Update Project Proposal | 0.5d | 2007-10-08 | 2007-10-08 | 342 | -83.5d | 0d |  |  |  |
| 344 | 1.4.2.2.6.3 | UC Register For An Account | 1d | 2007-10-08 | 2007-10-09 | 343 | -83.5d | 0d |  |  |  |
| 345 | 1.4.2.2.6.4 | UC Manage Collaborators | 1d | 2007-10-09 | 2007-10-10 | 344 | -83.5d | 0d |  |  |  |
| 346 | 1.4.2.3 | **Analysis and Design** | 18d | 2007-10-05 | 2007-10-30 |  | -98d | 0d |  |  |  |
| 347 | 1.4.2.3.1 | Complete C1 Use Case Designs | 5d | 2007-10-05 | 2007-10-11 |  | -97d | 0d |  |  |  |
| 348 | 1.4.2.3.2 | Revise Domain Object (Logical) Model as Needed | 2d | 2007-10-12 | 2007-10-15 | 347 | -97d | 0d |  |  |  |
| 349 | 1.4.2.3.3 | Support Analysis Services Integration as Needed | 11d | 2007-10-16 | 2007-10-30 | 348 | -97d | 0d |  |  |  |
| 350 | 1.4.2.3.4 | Update Software Architecture Document | 5d | 2007-10-16 | 2007-10-22 | 348 | -91d | 0d |  |  |  |
| 351 | 1.4.2.4 | **Implementation** | 17d | 2007-10-05 | 2007-10-29 |  | -97d | 0d |  |  | 748.8h |
| 352 | 1.4.2.4.1 | **Complete C1 Use Cases** | 15d | 2007-10-05 | 2007-10-25 |  | -95d | 0d |  |  | 288h |
| 353 | 1.4.2.4.1.1 | Manage Institutional Groups | 3d | 2007-10-05 | 2007-10-09 |  | -97d | 0d |  | jpike | 24h |
| 354 | 1.4.2.4.1.2 | Manage Collaborators | 3d | 2007-10-05 | 2007-10-09 |  | -97d | 0d |  | tparnell | 24h |
| 355 | 1.4.2.4.1.3 | Register for an Account | 3d | 2007-10-05 | 2007-10-09 |  | -97d | 0d |  | tparnell | 24h |
| 356 | 1.4.2.4.1.4 | Report on Work Accomplished | 15d | 2007-10-05 | 2007-10-25 |  | -109d | 0d |  | etavela [80%]; rsrinavasa | 216h |
| 357 | 1.4.2.4.2 | Fix Defects Found in Alpha Release | 12d | 2007-10-12 | 2007-10-29 | 359 | -96d | 0d |  | etavela [80%]; jpike; rsrinavasa; tparnell; bmason | 460.8h |

| ID | WBS | Task | Type | Duration | Start | Finish | Predecessors | Total slack | Free slack | Constraint | Resources | Work |
| --- | --- | --- | --- | --- | --- | --- | --- | --- | --- | --- | --- | --- |
| 358 | 1.4.2.5 | **Test** |  | 16d | 2007-10-05 | 2007-10-26 |  | -96d | 0d |  |  | 12h |
| 359 | 1.4.2.5.1 | Release QA Build C2A - Alpha 1 | milestone | 0d | 2007-10-12 | 2007-10-12 |  | -97d | 0d | start no earlier than 2007-10-12 |  |  |
| 360 | 1.4.2.5.2 | Release QA Build C2B | milestone | 0d | 2007-10-26 | 2007-10-26 |  | -97d | 0d | finish no earlier than 2007-10-26 |  |  |
| 361 | 1.4.2.5.3 | Load 1.x Data to DEV |  | 1.15d | 2007-10-05 | 2007-10-08 |  | -81.15d | 0d |  | smatyas [50%]; etavela [80%] | 12h |
| 362 | 1.4.2.6 | **Environment** |  | 1d | 2007-10-05 | 2007-10-05 |  | -81d | 0d |  |  |  |
| 363 | 1.4.2.6.1 | Update Build and Deploy Plan with SCM Initiative |  | 1d | 2007-10-05 | 2007-10-05 |  | -80d | 0d |  |  |  |
| 364 | 1.4.2.7 | **Configuration and Change Management** |  | 17d | 2007-10-05 | 2007-10-29 |  | -97d | 0d |  |  |  |
| 365 | 1.4.2.7.1 | Manage Gforge Content |  | 1d | 2007-10-05 | 2007-10-05 |  | -81d | 0d |  |  |  |
| 366 | 1.4.2.7.2 | Prioritize 2.0 Defects and UC for 2.x |  | 1d | 2007-10-29 | 2007-10-29 | 360 | -97d | 0d |  |  |  |
| 367 | 1.4.2.8 | C2 Complete | milestone | 0d | 2007-10-26 | 2007-10-26 | 358 | -96d | 0d |  |  |  |
| 368 | 1.4.3 | **Construction - Iteration 3** |  | 20d | 2007-11-01 | 2007-11-29 | 367, 319 | -100d | 0d |  |  | 785.6h |
| 369 | 1.4.3.1 | **Project Management** |  | 20d | 2007-11-02 | 2007-11-29 |  | -100d | 0d |  |  |  |
| 370 | 1.4.3.1.1 | Weekly Status Meetings |  | 20d | 2007-11-02 | 2007-11-29 |  | -99d | 0d |  |  |  |
| 371 | 1.4.3.1.2 | Dev Team Iteration Plan |  | 1d | 2007-11-02 | 2007-11-02 |  | -80d | 0d |  |  |  |
| 372 | 1.4.3.1.3 | Prepare Beta Release Plan |  | 2d | 2007-11-02 | 2007-11-05 |  | -81d | 0d |  |  |  |
| 373 | 1.4.3.1.4 | Organize Feedback from Beta Testers |  | 1d | 2007-11-02 | 2007-11-02 |  | -80d | 0d |  |  |  |
| 374 | 1.4.3.1.5 | C2 Assessment |  | 1d | 2007-11-02 | 2007-11-02 |  | -80d | 0d |  |  |  |
| 375 | 1.4.3.1.6 | C3 Review |  | 1d | 2007-11-19 | 2007-11-19 |  | -91d | 0d | start no earlier than 2007-11-19 |  |  |
| 376 | 1.4.3.1.7 | Plan for Next Iteration |  | 1d | 2007-11-02 | 2007-11-02 |  | -80d | 0d |  |  |  |
| 377 | 1.4.3.1.8 | **Finalize Deliverables** |  | 10d | 2007-11-02 | 2007-11-15 |  | -90d | 0d |  |  |  |
| 378 | 1.4.3.1.8.1 | Deliver C3 Plan |  | 3d | 2007-11-02 | 2007-11-06 |  | -86d | 0d |  |  |  |
| 379 | 1.4.3.1.8.2 | Update Beta Release Plan |  | 1d | 2007-11-07 | 2007-11-07 | 378 | -86d | 0d |  |  |  |
| 380 | 1.4.3.1.8.3 | October Status Report |  | 1d | 2007-11-15 | 2007-11-15 |  | -89d | 0d | start no earlier than 2007-11-15 |  |  |
| 381 | 1.4.3.1.8.4 | Finalize T1 Iteration Plan |  | 2d | 2007-11-08 | 2007-11-09 | 379 | -86d | 0d |  |  |  |
| 382 | 1.4.3.1.8.5 | Update Risk List |  | 1d | 2007-11-12 | 2007-11-12 | 381 | -86d | 0d |  |  |  |

| ID | WBS | Task | Type | Duration | Start | Finish | Predecessors | Total slack | Free slack | Constraint | Resources | Work |
| --- | --- | --- | --- | --- | --- | --- | --- | --- | --- | --- | --- | --- |
| 383 | 1.4.3.2 | **Requirements** |  | 18d | 2007-11-02 | 2007-11-27 |  | -98d | 0d |  |  | 60h |
| 384 | 1.4.3.2.1 | Update Vision and UC Summary with 2.x Priorities |  | 2d | 2007-11-02 | 2007-11-05 |  | -88d | 0d |  | bgendleman [50%] | 8h |
| 385 | 1.4.3.2.2 | Incorporate Stakeholder Feedback on C2 Use Cases |  | 2d | 2007-11-06 | 2007-11-07 | 384 | -88d | 0d |  | bgendleman [50%] | 8h |
| 386 | 1.4.3.2.3 | Incorporate Stakeholder Feedback on C2 UI Mockups |  | 1d | 2007-11-08 | 2007-11-08 | 385 | -88d | 0d |  | bgendleman [50%] | 4h |
| 387 | 1.4.3.2.4 | Incorporate Stakeholder Feedback on 2.x Mockups |  | 3d | 2007-11-09 | 2007-11-13 | 386 | -88d | 0d |  | bgendleman [50%] | 12h |
| 388 | 1.4.3.2.5 | Collaborate with Documentation to Support Online Help, User Guides |  | 7d | 2007-11-19 | 2007-11-27 |  | -98d | 0d | start no earlier than 2007-11-19 | bgendleman [50%] | 28h |
| 389 | 1.4.3.2.6 | **Detail Additional 2.x Use Cases** |  | 6d | 2007-11-02 | 2007-11-09 |  | -86d | 0d |  |  |  |
| 390 | 1.4.3.2.6.1 | UC Organize Workspace |  | 2d | 2007-11-02 | 2007-11-05 |  | -86d | 0d |  |  |  |
| 391 | 1.4.3.2.6.2 | UC Search for Arrays Using Natural Text |  | 2d | 2007-11-06 | 2007-11-07 | 390 | -86d | 0d |  |  |  |
| 392 | 1.4.3.2.6.3 | UC Import Contextual Data |  | 2d | 2007-11-08 | 2007-11-09 | 391 | -86d | 0d |  |  |  |
| 393 | 1.4.3.3 | **Analysis and Design** |  | 4d | 2007-11-02 | 2007-11-07 |  | -84d | 0d |  |  | 36.8h |
| 394 | 1.4.3.3.1 | Review 2.0 Use Case Designs with 2.x in mind |  | 2d | 2007-11-02 | 2007-11-05 |  | -84d | 0d |  | etavela [90%] | 14.4h |
| 395 | 1.4.3.3.2 | Revise Domain Object (Logical) Model as Needed |  | 1d | 2007-11-02 | 2007-11-02 |  | -81d | 0d |  | rsrinavasa | 8h |
| 396 | 1.4.3.3.3 | Support Analysis Services Integration as Needed |  | 3d | 2007-11-02 | 2007-11-06 |  | -83d | 0d |  |  |  |
| 397 | 1.4.3.3.4 | Update Software Architecture Document |  | 2d | 2007-11-06 | 2007-11-07 | 394 | -84d | 0d |  | etavela [90%] | 14.4h |
| 398 | 1.4.3.4 | **Implementation** |  | 17d | 2007-11-01 | 2007-11-26 |  | -97d | 0d |  |  | 688.8h |
| 399 | 1.4.3.4.1 | Fix Defects Found in Alpha Release |  | 10d | 2007-11-01 | 2007-11-15 |  | -90d | 0d |  | etavela [80%]; jpike; rsrinavasa; bmason; tparnell | 304h |
| 400 | 1.4.3.4.2 | Fix Defects Found in Beta Release |  | 12d | 2007-11-08 | 2007-11-26 | 401 | -97d | 0d |  | etavela [80%]; jpike; rsrinavasa; bmason; tparnell | 364.8h |
| 401 | 1.4.3.4.3 | Create caArray 2.0 Installer + Data Migrator |  | 5d | 2007-11-02 | 2007-11-08 |  | -97d | 0d |  | smatyas [50%] | 20h |
| 402 | 1.4.3.5 | **Test** |  | 20d | 2007-11-02 | 2007-11-29 |  | -100d | 0d |  |  |  |
| 403 | 1.4.3.5.1 | Release QA Build C3A - Beta 1 | milestone | 0d | 2007-11-09 | 2007-11-09 |  | -85d | 0d | start no earlier than 2007-11-09 |  |  |
| 404 | 1.4.3.5.2 | Release QA Build C3B - Beta 2 | milestone | 0d | 2007-11-23 | 2007-11-23 |  | -98d | 0d | start no earlier than 2007-11-23 |  |  |
| 405 | 1.4.3.5.3 | Load 1.x Data from DEV to QA to STAGE |  | 20d | 2007-11-02 | 2007-11-29 |  | -100d | 0d |  |  |  |
| 406 | 1.4.3.6 | **Environment** |  | 1d | 2007-11-23 | 2007-11-23 |  | -96d | 0d |  |  |  |
| 407 | 1.4.3.6.1 | Update Build and Deploy Plan with SCM Initiative |  | 1d | 2007-11-23 | 2007-11-23 | 404 | -96d | 0d |  |  |  |

| ID | WBS | Task | Type | Duration | Start | Finish | Predecessors | Baseline start | Baseline finish | Baseline duration | Total slack | Free slack | Constraint | Work |
| --- | --- | --- | --- | --- | --- | --- | --- | --- | --- | --- | --- | --- | --- | --- |
| 408 | 1.4.3.7 | **Configuration and Change Management** |  | 20d | 2007-11-02 | 2007-11-29 |  |  |  |  | -100d | 0d |  |  |
| 409 | 1.4.3.7.1 | Manage Gforge Content |  | 20d | 2007-11-02 | 2007-11-29 |  |  |  |  | -100d | 0d |  |  |
| 410 | 1.4.3.7.2 | Prioritize 2.0 Defects and UC for 2.x |  | 1d | 2007-11-23 | 2007-11-23 | 404 |  |  |  | -98d | 0d |  |  |
| 411 | 1.4.3.7.3 | Prepare Download Center Material, Release Notes |  | 2d | 2007-11-26 | 2007-11-27 | 410 |  |  |  | -98d | 0d |  |  |
| 412 | 1.4.3.8 | C3 Complete | milestone | 0d | 2007-11-29 | 2007-11-29 | 410, 409 | 2007-05-17 | 2007-05-18 | 1d? | -100d | 0d |  |  |
| 413 | 1.5 | **Transition Phase** |  | 11d | 2007-11-29 | 2007-12-14 | 230 | 2007-05-18 | 2007-05-21 | 1d? | -100d | 0d |  | 344h |
| 414 | 1.5.1 | **Transition - Iteration 1** |  | 11d | 2007-11-29 | 2007-12-14 |  | 2007-05-18 | 2007-05-21 | 1d? | -100d | 0d |  | 344h |
| 415 | 1.5.1.1 | **Project Management** |  | 10d | 2007-11-30 | 2007-12-13 |  |  |  |  | -99d | 0d |  |  |
| 416 | 1.5.1.1.1 | Weekly Status Meetings |  | 10d | 2007-11-30 | 2007-12-13 |  |  |  |  | -99d | 0d |  |  |
| 417 | 1.5.1.1.2 | Dev Team Iteration Plan |  | 1d | 2007-11-30 | 2007-11-30 |  |  |  |  | -90d | 0d |  |  |
| 418 | 1.5.1.1.3 | Prepare GA Release Plan |  | 2d | 2007-11-30 | 2007-12-03 |  |  |  |  | -91d | 0d |  |  |
| 419 | 1.5.1.1.4 | Organize Feedback from Beta Testers |  | 1d | 2007-11-30 | 2007-11-30 |  |  |  |  | -90d | 0d |  |  |
| 420 | 1.5.1.1.5 | C3 Assessment |  | 1d | 2007-11-30 | 2007-11-30 |  |  |  |  | -90d | 0d |  |  |
| 421 | 1.5.1.1.6 | T1 Review |  | 1d | 2007-11-30 | 2007-11-30 |  |  |  |  | -90d | 0d | start no earlier than 2007-11-19 |  |
| 422 | 1.5.1.1.7 | Plan for Next Iteration |  | 1d | 2007-11-30 | 2007-11-30 |  |  |  |  | -90d | 0d |  |  |
| 423 | 1.5.1.1.8 | **Finalize Deliverables** |  | 7d | 2007-11-30 | 2007-12-10 |  |  |  |  | -96d | 0d |  |  |
| 424 | 1.5.1.1.8.1 | Deliver T1 Plan |  | 3d | 2007-11-30 | 2007-12-04 |  |  |  |  | -96d | 0d |  |  |
| 425 | 1.5.1.1.8.2 | Prepare GA Release Plan |  | 1d | 2007-12-05 | 2007-12-05 | 424 |  |  |  | -96d | 0d |  |  |
| 426 | 1.5.1.1.8.3 | November Status Report |  | 1d | 2007-11-30 | 2007-11-30 |  |  |  |  | -90d | 0d | start no earlier than 2007-11-15 |  |
| 427 | 1.5.1.1.8.4 | Finalize T1 Iteration Plan |  | 2d | 2007-12-06 | 2007-12-07 | 425 |  |  |  | -96d | 0d |  |  |
| 428 | 1.5.1.1.8.5 | Update Risk List |  | 1d | 2007-12-10 | 2007-12-10 | 427 |  |  |  | -96d | 0d |  |  |
| 429 | 1.5.1.2 | **Requirements** |  | 5d | 2007-11-30 | 2007-12-06 |  |  |  |  | -94d | 0d |  |  |
| 430 | 1.5.1.2.1 | Finalize Documentation for GA Release |  | 5d | 2007-11-30 | 2007-12-06 |  |  |  |  | -94d | 0d |  |  |
| 431 | 1.5.1.3 | **Analysis and Design** |  | 1d | 2007-11-30 | 2007-11-30 |  |  |  |  | -90d | 0d |  |  |
| 432 | 1.5.1.3.1 | Model Manipulation as needed |  | 1d | 2007-11-30 | 2007-11-30 |  |  |  |  | -90d | 0d |  |  |

| ID | WBS | Task | Type | Duration | Start | Finish | Predecessors | Total slack | Free slack | Constraint | Resources | Work |
| --- | --- | --- | --- | --- | --- | --- | --- | --- | --- | --- | --- | --- |
| 433 | 1.5.1.4 | **Implementation** |  | 10d | 2007-11-29 | 2007-12-13 |  | -99d | 0d |  |  | 344h |
| 434 | 1.5.1.4.1 | Complete Targeted Defects for GA |  | 10d | 2007-11-29 | 2007-12-13 |  | -99d | 0d |  | etavela [80%]; jpike; rsrinavasa; bmason; tparnell | 304h |
| 435 | 1.5.1.4.2 | Complete caArray 2.0 Installer + Data Migrator |  | 10d | 2007-11-30 | 2007-12-13 |  | -99d | 0d |  | smatyas [50%] | 40h |
| 436 | 1.5.1.5 | **Test** |  | 10d | 2007-11-30 | 2007-12-14 |  | -99d | 0d |  |  |  |
| 437 | 1.5.1.5.1 | Release QA Build T1A | milestone | 0d | 2007-12-07 | 2007-12-07 |  | -96d | 0d | start no earlier than 2007-12-07 |  |  |
| 438 | 1.5.1.5.2 | Release QA Build T1B - GA (Bundle) | milestone | 0d | 2007-12-14 | 2007-12-14 |  | -99d | 0d | start no earlier than 2007-12-14 |  |  |
| 439 | 1.5.1.5.3 | Load 1.x Data from DEV to QA to STAGE to PROD |  | 10d | 2007-11-30 | 2007-12-13 |  | -99d | 0d |  |  |  |
| 440 | 1.5.1.6 | **Environment** |  | 1d | 2007-12-12 | 2007-12-12 |  | -98d | 0d |  |  |  |
| 441 | 1.5.1.6.1 | Update Build and Deploy Plan with SCM Initiative |  | 1d | 2007-12-12 | 2007-12-12 |  | -98d | 0d | start no earlier than 2007-12-12 |  |  |
| 442 | 1.5.1.7 | **Configuration and Change Management** |  | 11d | 2007-11-30 | 2007-12-14 |  | -100d | 0d |  |  |  |
| 443 | 1.5.1.7.1 | Manage Gforge Content |  | 10d | 2007-11-30 | 2007-12-13 |  | -100d | 0d |  |  |  |
| 444 | 1.5.1.7.2 | Prioritize 2.0 Defects and UC for 2.x |  | 1d | 2007-12-14 | 2007-12-14 | 443 | -100d | 0d |  |  |  |
| 445 | 1.5.1.7.3 | Release Download Center Material, Release Notes |  | 2d | 2007-12-07 | 2007-12-10 | 437 | -96d | 0d |  |  |  |
| 446 | 1.5.1.8 | T1 Complete | milestone | 0d | 2007-12-14 | 2007-12-14 | 444 | -100d | 0d |  |  |  |
